# RM项目1.0

How a schedule from MS Project changed from version to version. A marks actual dates.

## Version 1 (data date 2012-06-29, saved 2012-05-14, file RMV1.0_项目综合表.mpp)

Note of the change: add

| ID | WBS | Task | Duration | Start | Finish | Predecessors | Complete | Total float | Constraint |
| --- | --- | --- | --- | --- | --- | --- | --- | --- | --- |
| 1 | 1 | **立项** | 9.5d | 2012-01-01 08:00 A | 2012-01-13 14:00 A |  | 100% |  |  |
| 2 |  | 制定产品概念阶段进度计划 | 0.5d | 2012-01-02 08:00 A | 2012-01-02 14:00 A |  | 100% |  |  |
| 3 |  | 市场可行性分析 | 0d | 2012-01-01 08:00 A | 2012-01-01 08:00 A |  | 100% |  | start no earlier than 2011-08-26 08:00 |
| 4 |  | 技术可行性分析 | 0.5d | 2012-01-02 08:00 A | 2012-01-02 14:00 A |  | 100% |  | finish no earlier than 2012-01-03 17:00 |
| 5 |  | 用户需求调研 | 3d | 2012-01-02 09:00 A | 2012-01-04 18:00 A | 3 | 100% |  | start no earlier than 2012-01-02 08:00 |
| 6 |  | 用户需求分析 | 2d | 2012-01-04 08:00 A | 2012-01-06 17:00 A |  | 100% |  | finish no earlier than 2012-01-06 17:00 |
| 7 |  | 用户需求确认 | 0d | 2012-01-09 08:00 A | 2012-01-09 08:00 A |  | 100% |  | start no earlier than 2011-08-29 08:00 |
| 8 |  | 项目立项报告 | 0.5d | 2012-01-09 08:00 A | 2012-01-09 14:00 A |  | 100% |  | start no earlier than 2010-07-08 08:00 |
| 9 |  | 项目立项评审 | 0.5d | 2012-01-10 08:00 A | 2012-01-10 14:00 A |  | 100% |  | start no earlier than 2010-07-09 08:00 |
| 10 |  | 项目启动会 | 0d | 2012-01-10 08:00 A | 2012-01-10 08:00 A |  | 100% |  | start no earlier than 2011-09-01 08:00 |
| 11 |  | 项目策划 | 1d | 2012-01-11 08:00 A | 2012-01-11 18:00 A |  | 100% |  | finish no earlier than 2012-01-11 17:00 |
| 12 |  | 项目策划评审 | 0.5d | 2012-01-12 08:00 A | 2012-01-12 14:00 A | 11 | 100% |  |  |
| 13 |  | 立项阶段报告编制 | 0.5d | 2012-01-12 08:00 A | 2012-01-12 14:00 A |  | 100% |  | finish no earlier than 2010-07-16 17:00 |
| 14 |  | 立项阶段评审 | 0.5d | 2012-01-13 08:00 A | 2012-01-13 14:00 A |  | 100% |  | start no earlier than 2011-09-06 08:00 |
| 15 | 2 | **供应商选择** | 88d? | 2012-01-02 09:00 A | 2012-05-02 18:00 |  | 82% | 47d |  |
| 16 |  | 项目发包规划 | 1d? | 2012-01-02 09:00 A | 2012-01-02 18:00 A |  | 100% |  |  |
| 17 |  | 寻找供应商 | 1d? | 2012-01-02 09:00 A | 2012-01-02 18:00 A |  | 100% |  |  |
| 18 |  | 评估供应商 | 1d? | 2012-01-02 09:00 A | 2012-01-02 18:00 A |  | 100% |  |  |
| 19 |  | 初步需求沟通 | 1d? | 2012-01-02 09:00 A | 2012-01-02 18:00 A |  | 100% |  |  |
| 20 |  | 供应商系统DEMO演示 | 1d? | 2012-01-02 09:00 A | 2012-01-02 18:00 A |  | 100% |  |  |
| 21 |  | 供应商系统DEMO评审 | 1d? | 2012-01-02 09:00 A | 2012-01-02 18:00 A |  | 100% |  |  |
| 22 |  | 商务谈判 | 1d? | 2012-01-02 09:00 A | 2012-01-02 18:00 A |  | 100% |  |  |
| 23 |  | 编写外包合同 | 1d? | 2012-01-02 09:00 A | 2012-01-02 18:00 A |  | 100% |  |  |
| 24 |  | 外包合同评审 | 1d? | 2012-01-02 09:00 | 2012-01-02 18:00 |  |  | 134d |  |
| 25 |  | 外包合同签订 | 1d? | 2012-05-02 09:00 | 2012-05-02 18:00 |  |  | 47d | start no earlier than 2012-05-02 08:00 |
| 26 |  | 项目预付款 | 1d? | 2012-05-02 09:00 A | 2012-05-02 18:00 A |  | 100% |  | start no earlier than 2012-05-02 08:00 |
| 27 | 3 | **迭代开发** | 54d? | 2012-04-20 08:00 A | 2012-06-29 18:00 |  | 13% | 2d |  |
| 28 | 3.1 | **第1迭代** | 35.94d? | 2012-04-20 08:00 A | 2012-06-05 17:30 |  | 14% | 20.06d |  |
| 29 | 3.1.1 | **项目管理** | 31d | 2012-04-24 08:00 A | 2012-06-01 18:00 |  |  | 23d |  |
| 30 |  | 迭代计划制定（迭代的裁剪、估算、计划、评审、配置） | 0.5d | 2012-04-24 08:00 A | 2012-04-24 14:00 A |  | 100% |  | start no earlier than 2011-09-07 08:00 |
| 31 | 3.1.1.2 | **监控** | 30d | 2012-04-25 09:00 | 2012-06-01 18:00 |  |  | 23d |  |
| 32 |  | 周例会（完成功能确认） | 21d | 2012-05-04 17:00 | 2012-05-31 17:00 |  |  | 24.12d | finish no earlier than 2012-05-31 17:00 |
| 33 |  | 项目周报编制 | 21d | 2012-05-04 17:00 | 2012-05-31 17:00 |  |  | 24.12d | finish no earlier than 2012-05-31 17:00 |
| 34 |  | 偏差、风险、问题识别与跟踪 | 30d | 2012-04-25 09:00 | 2012-06-01 18:00 |  |  | 23d | start no earlier than 2012-04-25 08:00 |
| 35 |  | 项目月报的编制 | 0.25d | 2012-05-31 15:00 | 2012-05-31 17:00 |  |  | 24.12d | finish no earlier than 2012-05-31 17:00 |
| 36 |  | 变更管理 | 25d | 2012-05-02 09:00 | 2012-06-01 18:00 |  |  | 23d | start no earlier than 2012-05-02 08:00 |
| 37 |  | 外部接口协调 | 7.88d | 2012-05-02 09:00 | 2012-05-11 17:00 |  |  | 39.62d | finish no earlier than 2012-05-11 17:00 |
| 38 | 3.1.1.4 | **迭代总结** | 1.12d | 2012-05-31 13:00 | 2012-06-01 14:00 | 37 |  | 23.5d |  |
| 39 |  | 迭代1总结编制 | 0.5d | 2012-05-31 13:00 | 2012-05-31 17:00 |  |  | 24.12d | finish no earlier than 2012-05-31 17:00 |
| 40 |  | 迭代1总结评审 | 0.5d | 2012-06-01 09:00 | 2012-06-01 14:00 |  |  | 23.5d | start no earlier than 2012-06-01 08:00 |
| 41 | 3.1.2 | **概要设计** | 2.75d | 2012-04-23 08:00 A | 2012-04-25 16:01 |  |  | 52.25d |  |
| 42 |  | 设计（确认） | 0.25d | 2012-04-23 08:00 A | 2012-04-24 17:00 |  |  | 52.25d | finish no earlier than 2012-04-24 17:00 |
| 43 |  | 评审 | 0.88d | 2012-04-24 08:00 A | 2012-04-25 16:01 | 42 |  | 52.25d | finish no earlier than 2012-04-24 17:00 |
| 44 | 3.1.3 | **业务需求** | 35.94d? | 2012-04-20 08:00 A | 2012-06-05 17:30 |  | 24% | 20.06d |  |
| 45 |  | 用户故事拆分（确认） | 0.5d | 2012-04-20 08:00 A | 2012-04-20 14:00 A |  | 100% |  | finish no earlier than 2012-01-06 17:00 |
| 46 |  | 用户故事编写（确认） | 1d | 2012-04-24 08:00 A | 2012-04-24 18:00 A | 45 | 100% |  | finish no earlier than 2012-04-23 17:00 |
| 47 |  | 用户故事评审（确认） | 0.38d | 2012-04-26 08:00 A | 2012-04-26 12:00 A | 46 | 100% |  |  |
| 48 |  | 第一期详细设计 | 3d | 2012-05-02 09:00 | 2012-05-04 18:00 |  |  | 40.1d | start no earlier than 2012-05-02 08:30 |
| 49 | 3.1.3.5 | **招聘需求** | 2.9d | 2012-05-07 09:00 | 2012-05-09 17:12 |  |  | 40.1d |  |
| 50 |  | 编码 | 2d | 2012-05-07 09:00 | 2012-05-08 18:00 | 48 |  | 40.1d |  |
| 51 |  | 测试 | 0.4d | 2012-05-09 09:00 | 2012-05-09 13:12 | 50 |  | 40.1d |  |
| 52 |  | 走查 | 0.5d | 2012-05-09 13:12 | 2012-05-09 17:12 | 51 |  | 40.1d |  |
| 53 | 3.1.3.6 | **招聘设置-招聘负责人设定** | 1.45d | 2012-05-07 09:00 | 2012-05-08 13:36 |  |  | 43.55d |  |
| 54 |  | 编码 | 1d | 2012-05-07 09:00 | 2012-05-07 18:00 | 48 |  | 43.55d |  |
| 55 |  | 测试 | 0.2d | 2012-05-08 09:00 | 2012-05-08 10:36 | 54 |  | 43.55d |  |
| 56 |  | 走查 | 0.25d | 2012-05-08 10:36 | 2012-05-08 13:36 | 55 |  | 43.55d |  |
| 57 | 3.1.3.7 | **招聘设置-招聘渠道定义** | 1.45d | 2012-05-07 09:00 | 2012-05-08 13:36 |  |  | 40.55d |  |
| 58 |  | 编码 | 1d | 2012-05-07 09:00 | 2012-05-07 18:00 | 48 |  | 40.55d |  |
| 59 |  | 测试 | 0.2d | 2012-05-08 09:00 | 2012-05-08 10:36 | 58 |  | 40.55d |  |
| 60 |  | 走查 | 0.25d | 2012-05-08 10:36 | 2012-05-08 13:36 | 59 |  | 40.55d |  |
| 61 | 3.1.3.8 | **招聘需求汇总** | 3.6d | 2012-05-09 17:12 | 2012-05-14 14:00 |  |  | 38.5d |  |
| 62 |  | 编码 | 2d | 2012-05-09 17:12 | 2012-05-11 17:12 | 52 |  | 40.1d |  |
| 63 |  | 测试 | 0.4d | 2012-05-12 08:30 | 2012-05-12 11:42 |  |  | 39.54d | start no earlier than 2012-05-12 08:30 |
| 64 |  | 走查 | 0.5d | 2012-05-14 09:00 | 2012-05-14 14:00 |  |  | 38.5d | start no earlier than 2012-05-14 08:00 |
| 65 | 3.1.3.9 | **招聘计划-制定招聘计划** | 3.45d | 2012-05-08 13:36 | 2012-05-11 17:12 |  |  | 40.1d |  |
| 66 |  | 编码 | 2d | 2012-05-08 13:36 | 2012-05-10 13:36 | 60 |  | 41.55d |  |
| 67 |  | 测试 | 0.4d | 2012-05-11 09:00 | 2012-05-11 13:12 |  |  | 40.1d | start no earlier than 2012-05-11 08:30 |
| 68 |  | 走查 | 0.5d | 2012-05-11 13:12 | 2012-05-11 17:12 | 67 |  | 40.1d |  |
| 69 | 3.1.3.10 | **面试人员简历** | 5.05d | 2012-05-08 13:36 | 2012-05-14 14:00 |  |  | 36.75d |  |
| 70 |  | 编码 | 3d | 2012-05-08 13:36 | 2012-05-11 13:36 | 60 |  | 40.55d |  |

| ID | WBS | Task | Duration | Start | Finish | Predecessors | Complete | Total float | Constraint |
| --- | --- | --- | --- | --- | --- | --- | --- | --- | --- |
| 71 |  | 测试 | 0.5d | 2012-05-12 08:30 | 2012-05-12 13:30 |  |  | 33.14d | start no earlier than 2012-05-12 08:30 |
| 72 |  | 走查 | 0.5d | 2012-05-14 09:00 | 2012-05-14 14:00 |  |  | 38.5d | start no earlier than 2012-05-14 08:30 |
| 73 | 3.1.3.11 | **招聘计划执行** | 1.9d | 2012-05-14 14:30 | 2012-05-16 13:42 |  |  | 33.14d |  |
| 74 |  | 编码 | 1d | 2012-05-14 14:30 | 2012-05-15 14:30 | 71FS+1d |  | 33.14d |  |
| 75 |  | 测试 | 0.4d | 2012-05-15 14:30 | 2012-05-15 17:42 | 74 |  | 33.14d |  |
| 76 |  | 走查 | 0.5d | 2012-05-15 17:42 | 2012-05-16 13:42 | 75 |  | 36.54d |  |
| 77 | 3.1.3.12 | **简历复选** | 1.45d | 2012-05-15 17:42 | 2012-05-17 13:18 |  |  | 33.14d |  |
| 78 |  | 编码 | 1d | 2012-05-15 17:42 | 2012-05-16 17:42 | 75 |  | 33.14d |  |
| 79 |  | 测试 | 0.2d | 2012-05-16 17:42 | 2012-05-17 10:18 | 78 |  | 33.14d |  |
| 80 |  | 走查 | 0.25d | 2012-05-17 10:18 | 2012-05-17 13:18 | 79 |  | 35.59d |  |
| 81 | 3.1.3.13 | **面试管理-电话初试** | 1.65d | 2012-05-17 10:18 | 2012-05-18 16:30 |  |  | 34.19d |  |
| 82 |  | 编码 | 1d | 2012-05-17 10:18 | 2012-05-18 10:18 | 79 |  | 34.19d |  |
| 83 |  | 测试 | 0.4d | 2012-05-18 10:18 | 2012-05-18 14:30 | 82 |  | 34.19d |  |
| 84 |  | 走查 | 0.25d | 2012-05-18 14:30 | 2012-05-18 16:30 | 83 |  | 34.19d |  |
| 85 | 3.1.3.14 | **招聘设置-人才类型设置** | 1.7d | 2012-05-18 10:18 | 2012-05-21 16:54 |  |  | 33.14d |  |
| 86 |  | 编码 | 1d | 2012-05-18 10:18 | 2012-05-21 10:18 | 79FS+1d |  | 33.14d | finish no earlier than 2012-05-18 17:00 |
| 87 |  | 测试 | 0.2d | 2012-05-21 10:18 | 2012-05-21 11:54 | 86 |  | 33.14d |  |
| 88 |  | 走查 | 0.5d | 2012-05-21 11:54 | 2012-05-21 16:54 | 87 |  | 33.14d |  |
| 89 |  | 需求疑问的跟进 | 13d? | 2012-05-02 17:30 | 2012-05-18 17:30 |  |  | 34.06d | finish no earlier than 2012-05-18 17:30 |
| 90 |  | 开发技术支持 | 13d? | 2012-05-02 17:00 | 2012-05-18 17:00 |  |  | 34.12d | finish no earlier than 2012-05-18 17:00 |
| 91 |  | 日常的沟通和协调 | 21d | 2012-04-24 09:00 | 2012-05-21 18:00 |  |  | 33d | start no earlier than 2012-04-24 08:30 |
| 92 |  | 第一期 bug的修复 | 10d | 2012-05-21 09:00 | 2012-05-31 18:00 |  |  | 24d | start no earlier than 2012-05-21 08:00 |
| 93 |  | 用户故事联调 | 1d | 2012-05-22 09:00 | 2012-05-22 18:00 |  |  | 32d | start no earlier than 2012-05-22 08:30 |
| 94 | 3.1.3.20 | **迭代测试** | 29.94d | 2012-04-28 08:30 A | 2012-06-05 17:30 |  | 65% | 20.06d |  |
| 95 | 3.1.3.20.1 | **迭代测试** | 18.94d | 2012-04-28 08:30 A | 2012-05-23 17:30 |  | 61% | 31.06d |  |
| 96 |  | 测试方案编制 | 2.88d | 2012-05-04 08:30 A | 2012-05-08 17:00 A |  | 100% |  | finish no earlier than 2012-04-25 17:00 |
| 97 |  | 测试方案评审 | 0.94d | 2012-05-09 08:30 A | 2012-05-18 17:30 |  | 53% | 34.06d | finish no earlier than 2012-05-18 17:30 |
| 98 |  | 测试用例编制 | 7.88d | 2012-04-28 08:30 A | 2012-05-09 17:00 |  | 37% | 42.12d | finish no earlier than 2012-05-08 17:30 |
| 99 |  | 测试用例评审 | 4.94d | 2012-05-11 08:30 A | 2012-05-16 17:30 |  | 18% | 36.06d | finish no earlier than 2012-05-16 17:30 |
| 100 |  | 测试环境搭建 | 2d | 2012-05-18 08:30 A | 2012-05-21 18:00 A |  | 100% |  | start no earlier than 2011-09-27 08:00 |
| 101 |  | 迭代测试执行 | 2.94d | 2012-05-21 08:30 A | 2012-05-23 17:30 A |  | 100% |  | start no earlier than 2011-09-28 08:00 |
| 102 |  | 缺陷处理 | 2.94d | 2012-05-21 08:30 A | 2012-05-23 17:30 A |  | 100% |  | finish no earlier than 2012-05-23 17:30 |
| 103 | 3.1.3.20.2 | **回归测试** | 6.94d | 2012-05-29 08:30 A | 2012-06-05 17:30 |  | 71% | 20.06d |  |
| 104 |  | 回归测试执行 | 2.94d | 2012-05-29 08:30 A | 2012-05-31 17:30 A |  | 100% |  | finish no earlier than 2012-05-31 17:30 |
| 105 |  | 缺陷处理 | 6.94d | 2012-05-29 08:30 A | 2012-06-05 17:30 |  | 42% | 20.06d | finish no earlier than 2012-06-05 17:30 |
| 106 |  | 测试报告编写 | 1.88d | 2012-05-31 08:30 A | 2012-06-01 17:00 A |  | 100% |  | start no earlier than 2011-10-08 08:00 |
| 107 |  | 测试报告评审 | 1.88d | 2012-05-31 08:30 A | 2012-06-01 17:00 A |  | 100% |  | start no earlier than 2011-10-08 08:00 |
| 108 |  | 用户文档编制 | 3.88d | 2012-05-31 08:30 A | 2012-06-04 17:00 A |  | 100% |  | start no earlier than 2011-09-26 08:00 |
| 109 |  | 用户文档测试 | 1.88d | 2012-06-01 08:30 A | 2012-06-02 16:00 A |  | 100% |  | start no earlier than 2011-10-09 08:00 |
| 110 | 3.1.3.23 | **演示与发布** | 0.5d | 2012-06-01 09:00 | 2012-06-01 14:00 |  |  | 23.5d |  |
| 111 |  | 迭代演示 | 0.5d | 2012-06-01 09:00 | 2012-06-01 14:00 |  |  | 23.5d | start no earlier than 2012-06-01 08:30 |
| 112 |  | 验收发布 | 0.5d | 2012-06-01 09:00 | 2012-06-01 14:00 |  |  | 23.5d | start no earlier than 2012-06-01 08:00 |
| 113 | 3.1.3.24 | **合同付款** | 1d? | 2012-06-04 09:00 | 2012-06-04 18:00 |  |  | 21d |  |
| 114 |  | 要求对方提供项目款发票 | 1d? | 2012-06-04 09:00 | 2012-06-04 18:00 |  |  | 21d | start no earlier than 2012-06-04 08:00 |
| 115 |  | 支付项目款 | 1d? | 2012-06-04 09:00 | 2012-06-04 18:00 |  |  | 21d | start no earlier than 2012-06-04 08:00 |
| 116 | 3.2 | **第2迭代** | 52d? | 2012-04-24 09:00 A | 2012-06-29 18:00 |  | 12% | 2d |  |
| 117 | 3.2.1 | **项目管理** | 46.5d | 2012-04-24 09:00 A | 2012-06-22 14:00 |  |  | 7.5d |  |
| 118 |  | 迭代计划制定（迭代的裁剪、估算、计划、评审、配置） | 0.5d | 2012-04-24 09:00 | 2012-04-24 14:00 |  |  | 53.5d | start no earlier than 2012-04-24 08:00 |
| 119 | 3.2.1.2 | **监控** | 16.88d | 2012-05-21 09:00 | 2012-06-08 17:00 |  |  | 17.12d |  |
| 120 |  | 周例会（完成功能确认） | 15d | 2012-05-22 17:00 | 2012-06-08 17:00 |  |  | 17.12d | finish no earlier than 2012-06-08 17:00 |
| 121 |  | 项目周报编制 | 8.33d | 2012-05-25 09:00 | 2012-06-04 11:40 |  |  | 21.67d | start no earlier than 2012-05-25 08:00 |
| 122 |  | 偏差、风险、问题识别与跟踪 | 15d | 2012-05-21 09:00 | 2012-06-06 18:00 |  |  | 19d | start no earlier than 2012-05-21 08:00 |
| 123 |  | 项目月报的编制 | 0.12d | 2012-06-08 09:00 | 2012-06-08 10:00 |  |  | 17.88d | start no earlier than 2012-06-08 08:00 |
| 124 |  | 变更管理 | 16.67d | 2012-05-21 09:00 | 2012-06-08 15:20 |  |  | 17.33d | start no earlier than 2012-05-21 08:00 |
| 125 |  | 外部接口协调 | 5.77d | 2012-05-14 08:00 A | 2012-05-21 16:09 |  |  | 25.23d | finish no earlier than 2012-05-18 17:00 |
| 126 | 3.2.1.4 | **迭代总结** | 1.12d | 2012-06-21 13:00 A | 2012-06-22 14:00 | 125 |  | 7.5d |  |
| 127 |  | 迭代1总结编制 | 0.5d | 2012-06-21 13:00 | 2012-06-21 17:00 |  |  | 8.12d | finish no earlier than 2012-06-21 17:00 |
| 128 |  | 迭代1总结评审 | 0.5d | 2012-06-22 08:00 A | 2012-06-22 14:00 |  |  | 7.5d | start no earlier than 2011-10-10 08:00 |
| 129 | 3.2.2 | **概要设计** | 0.19d | 2012-05-18 08:00 A | 2012-05-18 10:30 |  |  | 34.81d |  |
| 130 |  | 设计（确认） | 0.06d | 2012-05-18 08:00 A | 2012-05-18 09:30 |  |  | 34.81d | start no earlier than 2011-08-30 08:00 |
| 131 |  | 评审 | 0.12d | 2012-05-18 08:00 A | 2012-05-18 10:30 | 130 |  | 34.81d |  |
| 132 | 3.2.3 | **业务需求** | 41d? | 2012-05-09 08:00 A | 2012-06-29 18:00 |  | 18% | 2d |  |
| 133 |  | 用户故事拆分（确认） | 0.25d | 2012-05-09 08:00 A | 2012-05-09 17:00 |  |  | 42.12d | finish no earlier than 2012-05-09 17:00 |
| 134 |  | 用户故事编写（确认） | 1d | 2012-05-18 08:00 A | 2012-05-18 18:00 A | 133 | 100% |  | finish no earlier than 2012-05-18 17:00 |
| 135 |  | 用户故事评审（确认） | 0.5d | 2012-05-21 08:00 A | 2012-05-21 14:00 |  |  | 33.5d |  |
| 136 |  | 第二期详细设计 | 3d | 2012-05-21 09:00 | 2012-05-23 18:00 |  |  | 20d | start no earlier than 2012-05-21 08:30 |
| 137 | 3.2.3.5 | **招聘设置-通知模板编辑** | 3.5d | 2012-05-24 09:00 | 2012-05-28 14:00 |  |  | 27.5d |  |
| 138 |  | 编码 | 2d | 2012-05-24 09:00 | 2012-05-25 18:00 | 136 |  | 28.8d |  |
| 139 |  | 测试 | 0.2d | 2012-05-26 08:00 | 2012-05-26 09:36 | 138 |  | 28.8d |  |
| 140 |  | 走查 | 0.5d | 2012-05-28 09:00 | 2012-05-28 14:00 |  |  | 27.5d | start no earlier than 2012-05-28 08:00 |

| ID | WBS | Task | Duration | Start | Finish | Predecessors | Complete | Total float | Constraint |
| --- | --- | --- | --- | --- | --- | --- | --- | --- | --- |
| 141 | 3.2.3.6 | **面试管理-面试安排** | 3.25d | 2012-05-24 09:00 | 2012-05-28 11:00 |  |  | 27.75d |  |
| 142 |  | 编码 | 2d | 2012-05-24 09:00 | 2012-05-25 18:00 | 136 |  | 28.5d |  |
| 143 |  | 测试 | 0.5d | 2012-05-26 08:00 | 2012-05-26 12:00 | 142 |  | 28.5d |  |
| 144 |  | 走查 | 0.25d | 2012-05-28 09:00 | 2012-05-28 11:00 |  |  | 27.75d | start no earlier than 2012-05-28 08:00 |
| 145 | 3.2.3.7 | **前台接待** | 3.5d | 2012-05-24 09:00 | 2012-05-28 14:00 |  |  | 27.5d |  |
| 146 |  | 编码 | 2d | 2012-05-24 09:00 | 2012-05-25 18:00 | 136 |  | 27.5d |  |
| 147 |  | 测试 | 1d | 2012-05-26 08:00 | 2012-05-26 17:00 | 146 |  | 27.5d |  |
| 148 |  | 走查 | 0.5d | 2012-05-28 09:00 | 2012-05-28 14:00 | 147 |  | 27.5d |  |
| 149 | 3.2.3.8 | **面试管理-面试执行** | 2.75d | 2012-05-28 09:00 | 2012-05-30 16:00 |  |  | 23.85d |  |
| 150 |  | 编码 | 2d | 2012-05-28 09:00 | 2012-05-29 18:00 |  |  | 23.85d | start no earlier than 2012-05-28 08:00 |
| 151 |  | 测试 | 0.5d | 2012-05-30 09:00 | 2012-05-30 14:00 | 150 |  | 23.85d |  |
| 152 |  | 走查 | 0.25d | 2012-05-30 14:00 | 2012-05-30 16:00 | 151 |  | 25.25d |  |
| 153 | 3.2.3.9 | **面试管理-拟录用** | 3d | 2012-05-28 09:00 | 2012-05-30 18:00 |  |  | 25d |  |
| 154 |  | 编码 | 2d | 2012-05-28 09:00 | 2012-05-29 18:00 | 136FS+2d |  | 25d | start no earlier than 2012-05-28 08:00 |
| 155 |  | 测试 | 0.5d | 2012-05-30 09:00 | 2012-05-30 14:00 | 154 |  | 25d |  |
| 156 |  | 走查 | 0.5d | 2012-05-30 14:00 | 2012-05-30 18:00 | 155 |  | 25d |  |
| 157 | 3.2.3.10 | **面试管理-背景调查** | 1.65d | 2012-05-30 14:00 | 2012-06-01 10:12 |  |  | 23.85d |  |
| 158 |  | 编码 | 1d | 2012-05-30 14:00 | 2012-05-31 14:00 | 151 |  | 23.85d |  |
| 159 |  | 测试 | 0.4d | 2012-05-31 14:00 | 2012-05-31 17:12 | 158 |  | 23.85d |  |
| 160 |  | 走查 | 0.25d | 2012-05-31 17:12 | 2012-06-01 10:12 | 159 |  | 23.85d |  |
| 161 | 3.2.3.11 | **入职手续-背景调查问题设定** | 2.65d | 2012-05-29 09:00 | 2012-05-31 15:12 |  |  | 20d |  |
| 162 |  | 编码 | 2d | 2012-05-29 09:00 | 2012-05-30 18:00 | 136FS+4d |  | 20d |  |
| 163 |  | 测试 | 0.4d | 2012-05-31 09:00 | 2012-05-31 13:12 | 162 |  | 20d |  |
| 164 |  | 走查 | 0.25d | 2012-05-31 13:12 | 2012-05-31 15:12 | 163 |  | 20d |  |
| 165 | 3.2.3.12 | **入职手续-入职手续** | 2.45d | 2012-05-31 15:12 | 2012-06-04 09:48 |  |  | 21.9d |  |
| 166 |  | 编码 | 2d | 2012-05-31 15:12 | 2012-06-02 14:12 | 164 |  | 21.9d | finish no earlier than 2012-06-01 17:00 |
| 167 |  | 测试 | 0.2d | 2012-06-02 14:12 | 2012-06-02 15:48 | 166 |  | 21.9d |  |
| 168 |  | 走查 | 0.25d | 2012-06-02 15:48 | 2012-06-04 09:48 | 167 |  | 21.9d |  |
| 169 | 3.2.3.13 | **入职手续-体检明细表** | 1.45d | 2012-05-31 15:12 | 2012-06-02 08:48 |  |  | 22.9d |  |
| 170 |  | 编码 | 1d | 2012-05-31 15:12 | 2012-06-01 15:12 | 164 |  | 22.9d |  |
| 171 |  | 测试 | 0.2d | 2012-06-01 15:12 | 2012-06-01 16:48 | 170 |  | 22.9d |  |
| 172 |  | 走查 | 0.25d | 2012-06-01 16:48 | 2012-06-02 08:48 | 171 |  | 22.9d |  |
| 173 | 3.2.3.14 | **入职手续-离职证明** | 1.45d | 2012-05-31 15:12 | 2012-06-02 08:48 |  |  | 20d |  |
| 174 |  | 编码 | 1d | 2012-05-31 15:12 | 2012-06-01 15:12 | 164 |  | 20d |  |
| 175 |  | 测试 | 0.2d | 2012-06-01 15:12 | 2012-06-01 16:48 | 174 |  | 20d |  |
| 176 |  | 走查 | 0.25d | 2012-06-01 16:48 | 2012-06-02 08:48 | 175 |  | 20d |  |
| 177 | 3.2.3.15 | **入职手续-入职** | 1.45d | 2012-06-04 09:00 | 2012-06-05 13:36 |  |  | 19.1d |  |
| 178 |  | 编码 | 1d | 2012-06-04 09:00 | 2012-06-04 18:00 | 176 |  | 19.1d | start no earlier than 2012-06-04 08:00 |
| 179 |  | 测试 | 0.2d | 2012-06-05 09:00 | 2012-06-05 10:36 | 178 |  | 19.1d |  |
| 180 |  | 走查 | 0.25d | 2012-06-05 10:36 | 2012-06-05 13:36 | 179 |  | 20.55d |  |
| 181 | 3.2.3.16 | **简历管理-面试简历统计** | 1.7d | 2012-06-05 10:36 | 2012-06-06 17:12 |  |  | 19.1d |  |
| 182 |  | 编码 | 1d | 2012-06-05 10:36 | 2012-06-06 10:36 | 179 |  | 19.1d |  |
| 183 |  | 测试 | 0.4d | 2012-06-06 10:36 | 2012-06-06 14:48 | 182 |  | 19.1d |  |
| 184 |  | 走查 | 0.3d | 2012-06-06 14:48 | 2012-06-06 17:12 | 183 |  | 19.1d |  |
| 185 |  | 需求疑问的跟进 | 16d | 2012-05-21 09:00 | 2012-06-07 18:00 |  |  | 18d | start no earlier than 2012-05-21 08:30 |
| 186 |  | 开发技术支持 | 16d | 2012-05-21 09:00 | 2012-06-07 18:00 |  |  | 18d | start no earlier than 2012-05-21 08:00 |
| 187 |  | 日常的沟通和协调 | 16d | 2012-05-21 09:00 | 2012-06-07 18:00 |  |  | 18d | start no earlier than 2012-05-21 08:00 |
| 188 |  | 第一、二期bugs修复 | 12d | 2012-06-07 09:00 | 2012-06-22 18:00 |  |  | 7d | start no earlier than 2012-06-07 08:00 |
| 189 |  | 用户故事联调 | 1d | 2012-06-05 17:00 | 2012-06-06 17:00 |  |  | 19.12d | finish no earlier than 2012-06-06 17:00 |
| 190 | 3.2.3.22 | **迭代测试** | 14.88d | 2012-06-05 08:30 A | 2012-06-25 17:00 |  | 84% | 6.12d |  |
| 191 | 3.2.3.22.1 | **迭代测试** | 6.94d | 2012-06-05 08:30 A | 2012-06-13 17:30 |  | 99% | 14.06d |  |
| 192 |  | 测试环境搭建 | 1.94d | 2012-06-05 08:30 A | 2012-06-06 17:30 |  | 97% | 19.06d | finish no earlier than 2012-06-06 17:30 |
| 193 |  | 迭代测试执行 | 3d | 2012-06-06 08:30 A | 2012-06-08 18:00 A |  | 100% |  | start no earlier than 2011-09-28 08:00 |
| 194 |  | 缺陷处理 | 5.94d | 2012-06-06 08:30 A | 2012-06-13 17:30 A |  | 100% |  | start no earlier than 2011-09-29 08:00 |
| 195 | 3.2.3.22.2 | **回归测试** | 7.88d | 2012-06-14 08:30 A | 2012-06-25 17:00 |  | 66% | 6.12d |  |
| 196 |  | 回归测试执行 | 2.94d | 2012-06-14 08:30 A | 2012-06-18 17:30 A |  | 100% |  | start no earlier than 2011-09-30 08:00 |
| 197 |  | 缺陷处理 | 2.94d | 2012-06-14 08:30 A | 2012-06-18 17:30 A |  | 100% |  | start no earlier than 2011-10-08 08:00 |
| 198 |  | 测试报告编写 | 1.88d | 2012-06-18 08:30 A | 2012-06-25 17:00 |  | 27% | 6.12d | finish no earlier than 2012-06-25 17:00 |
| 199 |  | 测试报告评审 | 0d | 2012-06-18 08:30 A | 2012-06-25 08:00 A |  | 100% |  | finish no earlier than 2012-06-25 08:00 |
| 200 |  | 测试总结编写 | 0d | 2012-06-18 08:30 A | 2012-06-25 08:00 A |  | 100% |  | finish no earlier than 2012-06-25 08:00 |
| 201 |  | 测试总结评审 | 1.88d | 2012-06-18 08:30 A | 2012-06-19 17:00 |  |  | 10.12d | finish no earlier than 2012-06-26 17:00 |
| 202 |  | 用户文档编制 | 1.88d | 2012-06-20 08:30 A | 2012-06-21 17:00 A |  | 100% |  | start no earlier than 2011-09-26 08:00 |
| 203 |  | 用户文档测试 | 0.5d | 2012-06-20 08:30 A | 2012-06-20 14:00 A |  | 100% |  | start no earlier than 2011-10-09 08:00 |
| 204 | 3.2.3.25 | **演示与发布** | 0.5d | 2012-06-28 08:00 A | 2012-06-28 14:00 A |  | 100% |  |  |
| 205 |  | 迭代演示 | 0.5d | 2012-06-28 08:00 A | 2012-06-28 14:00 A |  | 100% |  | start no earlier than 2011-10-09 08:00 |
| 206 |  | 验收发布 | 0.5d | 2012-06-28 08:00 A | 2012-06-28 14:00 A |  | 100% |  | start no earlier than 2011-10-09 08:00 |
| 207 | 3.2.3.26 | **合同付款** | 1d? | 2012-06-29 09:00 | 2012-06-29 18:00 |  |  | 2d |  |
| 208 |  | 要求对方提供项目款发票 | 1d? | 2012-06-29 09:00 | 2012-06-29 18:00 |  |  | 2d | start no earlier than 2012-06-29 08:00 |
| 209 |  | 支付项目款 | 1d? | 2012-06-29 09:00 | 2012-06-29 18:00 |  |  | 2d | start no earlier than 2012-06-29 08:00 |
| 210 | 4 | **验收** | 8d? | 2012-06-22 09:00 | 2012-07-03 18:00 |  |  | 0d |  |

| ID | WBS | Task | Duration | Start | Finish | Complete | Total float | Constraint |
| --- | --- | --- | --- | --- | --- | --- | --- | --- |
| 211 | 4.1 | **产品试运行** | 5.88d | 2012-06-22 09:00 | 2012-06-29 17:00 |  | 2.12d |  |
| 212 |  | 搭建试运行环境 | 0.5d | 2012-06-22 09:00 | 2012-06-22 14:00 |  | 7.5d | start no earlier than 2012-06-22 08:00 |
| 213 |  | 产品试运行及缺陷修复 | 5.88d | 2012-06-22 09:00 | 2012-06-29 17:00 |  | 2.12d | finish no earlier than 2012-06-29 17:00 |
| 214 | 4.2 | **系统验收** | 6.5d | 2012-06-22 09:00 | 2012-07-02 14:00 |  | 1.5d |  |
| 215 |  | 搭建验收环境 | 0.5d | 2012-06-22 09:00 | 2012-06-22 14:00 |  | 7.5d | start no earlier than 2012-06-22 08:00 |
| 216 |  | 系统验收 | 1.5d | 2012-06-29 09:00 | 2012-07-02 14:00 |  | 1.5d | start no earlier than 2012-06-29 08:00 |
| 217 | 4.3 | **合同付款** | 1d? | 2012-07-02 09:00 | 2012-07-02 18:00 |  | 1d |  |
| 218 |  | 要求对方提供项目款发票 | 1d? | 2012-07-02 09:00 | 2012-07-02 18:00 |  | 1d | start no earlier than 2012-07-02 08:00 |
| 219 |  | 支付项目款 | 1d? | 2012-07-02 09:00 | 2012-07-02 18:00 |  | 1d | start no earlier than 2012-07-02 08:00 |
| 220 | 4.4 | **系统发布** | 1d | 2012-07-02 09:00 | 2012-07-02 18:00 |  | 1d |  |
| 221 |  | 搭建运行环境 | 0.5d | 2012-07-02 09:00 | 2012-07-02 14:00 |  | 1.5d | start no earlier than 2012-07-02 08:00 |
| 222 |  | 安装运行 | 0.5d | 2012-07-02 09:00 | 2012-07-02 14:00 |  | 1.5d | start no earlier than 2012-07-02 08:00 |
| 223 |  | 客户数据初始化 | 1d | 2012-07-02 09:00 | 2012-07-02 18:00 |  | 1d | start no earlier than 2012-07-02 08:00 |
| 224 |  | 客户问题反馈与处理 | 2d | 2012-07-02 09:00 | 2012-07-03 18:00 |  | 0d | start no earlier than 2012-07-02 08:00 |
| 225 | 5 | **配置管理** | 567d? | 2010-04-27 09:00 A | 2012-06-27 18:00 |  | 4d |  |
| 226 | 5.1 | **制定配置管理计划** | 0.5d | 2012-04-27 09:00 | 2012-04-27 14:00 |  | 50.5d |  |
| 227 |  | 编写项目配置管理计划 | 0.5d | 2012-04-27 09:00 | 2012-04-27 14:00 |  | 50.5d | start no earlier than 2012-04-27 08:00 |
| 228 |  | 评审项目配置管理计划 | 0.5d | 2012-04-27 09:00 | 2012-04-27 14:00 |  | 50.5d | start no earlier than 2012-04-27 08:00 |
| 229 | 5.2 | **创建和维护配置库** | 521d | 2010-04-27 09:00 | 2012-04-27 18:00 |  | 50d |  |
| 230 |  | 创建配置库 | 0.5d | 2010-04-27 09:00 | 2010-04-27 14:00 |  | 570.5d | start no earlier than 2010-04-27 08:00 |
| 231 |  | 创建配置项 | 1d | 2012-04-26 17:00 | 2012-04-27 17:00 |  | 50.12d | finish no earlier than 2012-04-27 17:00 |
| 232 |  | 项目权限设计 | 0.5d | 2012-04-27 09:00 | 2012-04-27 14:00 |  | 50.5d | start no earlier than 2012-04-27 08:00 |
| 233 |  | 配置权限分配 | 1d | 2012-04-27 09:00 | 2012-04-27 18:00 |  | 50d | start no earlier than 2012-04-27 08:00 |
| 234 | 5.3 | **创建基线** | 47d? | 2012-04-27 09:00 A | 2012-06-27 18:00 |  | 4d |  |
| 235 | 5.3.1 | **立项基线** | 1d? | 2012-04-27 09:00 | 2012-04-27 18:00 |  | 50d |  |
| 236 |  | 配置审计 | 1d? | 2012-04-27 09:00 | 2012-04-27 18:00 |  | 50d | start no earlier than 2012-04-27 08:00 |
| 237 |  | 建立基线 | 1d? | 2012-04-27 09:00 | 2012-04-27 18:00 |  | 50d | start no earlier than 2012-04-27 08:00 |
| 238 |  | 审计基线 | 1d? | 2012-04-27 09:00 | 2012-04-27 18:00 |  | 50d | start no earlier than 2012-04-27 08:00 |
| 239 |  | 配置项与基线跟踪 | 1d? | 2012-04-27 09:00 | 2012-04-27 18:00 |  | 50d | start no earlier than 2012-04-27 08:00 |
| 240 | 5.3.2 | **迭代开发基线** | 44d? | 2012-05-02 09:00 A | 2012-06-27 18:00 |  | 4d |  |
| 241 | 5.3.2.1 | **第1次迭代** | 9.5d | 2012-05-21 09:00 A | 2012-05-31 14:00 |  | 24.5d |  |
| 242 |  | 建立测试版本 | 0.5d | 2012-05-21 09:00 | 2012-05-21 14:00 |  | 33.5d | start no earlier than 2012-05-21 08:00 |
| 243 |  | 建立迭代版本 | 0.5d | 2012-05-25 09:00 | 2012-05-25 14:00 |  | 29.5d | start no earlier than 2012-05-25 08:00 |
| 244 |  | 建立产品版本 | 0.5d | 2012-05-31 08:00 A | 2012-05-31 14:00 |  | 24.5d | start no earlier than 2010-07-27 08:00 |
| 245 | 5.3.2.2 | **第2次迭代** | 14d? | 2012-06-08 09:00 | 2012-06-27 18:00 |  | 4d |  |
| 246 |  | 建立测试版本 | 1d? | 2012-06-08 09:00 | 2012-06-08 18:00 |  | 17d | start no earlier than 2012-06-08 08:00 |
| 247 |  | 建立迭代版本 | 1d? | 2012-06-22 09:00 | 2012-06-22 18:00 |  | 7d | start no earlier than 2012-06-22 08:00 |
| 248 |  | 建立产品版本 | 1d? | 2012-06-27 09:00 | 2012-06-27 18:00 |  | 4d | start no earlier than 2012-06-27 08:00 |
| 249 |  | 配置审计 | 1d? | 2012-05-02 09:00 | 2012-05-02 18:00 |  | 47d | start no earlier than 2012-05-02 08:00 |
| 250 |  | 建立基线 | 1d? | 2012-05-02 09:00 | 2012-05-02 18:00 |  | 47d | start no earlier than 2012-05-02 08:00 |
| 251 |  | 审计基线 | 1d? | 2012-05-02 09:00 | 2012-05-02 18:00 |  | 47d | start no earlier than 2012-05-02 08:00 |
| 252 |  | 配置项与基线跟踪 | 1d? | 2012-05-02 09:00 | 2012-05-02 18:00 |  | 47d | start no earlier than 2012-05-02 08:00 |
| 253 | 5.3.3 | **发布基线** | 1d? | 2012-05-02 09:00 | 2012-05-02 18:00 |  | 47d |  |
| 254 |  | 配置审计 | 1d? | 2012-05-02 09:00 | 2012-05-02 18:00 |  | 47d | start no earlier than 2012-05-02 08:00 |
| 255 |  | 建立基线 | 1d? | 2012-05-02 09:00 | 2012-05-02 18:00 |  | 47d | start no earlier than 2012-05-02 08:00 |
| 256 |  | 审计基线 | 1d? | 2012-05-02 09:00 | 2012-05-02 18:00 |  | 47d | start no earlier than 2012-05-02 08:00 |
| 257 |  | 配置项与基线跟踪 | 1d? | 2012-05-02 09:00 | 2012-05-02 18:00 |  | 47d | start no earlier than 2012-05-02 08:00 |
| 258 | 6 | **质量保证** | 57d? | 2012-04-17 09:00 A | 2012-06-29 18:00 | 2% | 2d |  |
| 259 | 6.1 | **立项阶段** | 17.88d? | 2012-04-17 09:00 A | 2012-05-10 17:00 | 4% | 41.12d |  |
| 260 |  | QA辅导 | 2.88d | 2012-04-17 09:00 | 2012-04-19 17:00 |  | 56.12d | finish no earlier than 2012-04-19 17:00 |
| 261 | 6.1.2 | **QA检查** | 11d | 2012-04-19 17:00 A | 2012-05-04 17:00 | 5% | 45.12d |  |
| 262 |  | 立项阶段流程检查 | 6d | 2012-04-19 17:00 | 2012-04-27 17:00 |  | 50.12d | finish no earlier than 2012-04-27 17:00 |
| 263 |  | 客户需求分析评审检查 | 6.12d | 2012-04-19 17:00 A | 2012-04-27 18:00 |  | 50d | finish no earlier than 2012-04-28 17:00 |
| 264 |  | 市场可行性分析评审检查 | 7d | 2012-04-19 17:00 | 2012-04-30 17:00 |  | 49.12d | start no earlier than 2012-04-19 17:00 |
| 265 |  | 技术可行性分析评审检查 | 7d | 2012-04-19 17:00 | 2012-04-30 17:00 |  | 49.12d | start no earlier than 2012-04-19 17:00 |
| 266 |  | 项目立项报告评审检查 | 7d | 2012-04-19 17:00 | 2012-04-30 17:00 |  | 49.12d | start no earlier than 2012-04-19 17:00 |
| 267 |  | 检查结果反馈、确认 | 0.25d | 2012-05-03 08:00 A | 2012-05-03 11:00 |  | 46.75d | finish no earlier than 2010-07-15 17:00 |
| 268 |  | 不符合项跟踪、验证 | 1.88d | 2012-05-03 08:00 A | 2012-05-04 17:00 A | 100% |  | finish no earlier than 2012-05-03 08:00 |
| 269 |  | 立项基线配置检查 | 1.88d? | 2012-05-03 09:00 | 2012-05-04 17:00 |  | 45.12d | start no earlier than 2012-05-03 08:00 |
| 270 |  | QA工作报告编制 | 1.88d | 2012-05-09 09:00 | 2012-05-10 17:00 |  | 41.12d | start no earlier than 2012-05-09 08:00 |
| 271 | 6.2 | **迭代开发** | 47.88d | 2012-04-26 09:00 A | 2012-06-27 17:00 | 2% | 4.12d |  |
| 272 | 6.2.1 | **第1迭代** | 47.88d | 2012-04-26 09:00 A | 2012-06-27 17:00 | 1% | 4.12d |  |
| 273 |  | 编制《QA工作计划》 | 2d | 2012-04-27 08:00 A | 2012-04-30 18:00 |  | 49d | finish no earlier than 2012-04-28 17:00 |
| 274 |  | 评审《QA工作计划》 | 0.5d | 2012-04-28 08:00 A | 2012-04-30 14:00 | 25% | 49.5d | start no earlier than 2010-07-16 08:00 |
| 275 |  | 辅助项目经理进行项目裁剪、估算、计划、评审、配置等 | 0d | 2012-04-28 08:00 A | 2012-04-28 08:00 A | 100% |  | finish no earlier than 2012-04-28 08:00 |
| 276 |  | QA辅导 | 5.88d | 2012-04-27 09:00 | 2012-05-04 17:00 |  | 45.12d | finish no earlier than 2012-05-04 17:00 |
| 277 | 6.2.1.5 | **QA检查** | 27.5d | 2012-04-26 09:00 A | 2012-05-31 14:00 | 11% | 24.5d |  |
| 278 |  | 迭代开发流程检查 | 0.5d | 2012-04-26 09:00 | 2012-04-26 14:00 |  | 51.5d | start no earlier than 2012-04-26 09:00 |
| 279 |  | 用户故事评审检查 | 0.5d | 2012-04-26 09:00 | 2012-04-26 14:00 |  | 51.5d | start no earlier than 2012-04-26 08:00 |
| 280 |  | 概要设计评审检查 | 0d | 2012-05-03 08:00 A | 2012-05-03 08:00 A | 100% |  | finish no earlier than 2012-04-26 09:00 |

| ID | WBS | Task | Duration | Start | Finish | Predecessors | Complete | Total float | Constraint |
| --- | --- | --- | --- | --- | --- | --- | --- | --- | --- |
| 281 |  | 测试方案评审检查 | 0.5d | 2012-05-09 09:00 | 2012-05-09 14:00 |  |  | 42.5d | start no earlier than 2012-05-09 08:30 |
| 282 |  | 编码活动检查 | 0.5d | 2012-05-03 08:00 A | 2012-05-03 14:00 |  | 25% | 46.5d | finish no earlier than 2010-09-14 17:00 |
| 283 |  | 测试用例评审检查 | 0.5d | 2012-05-09 08:30 A | 2012-05-09 14:00 |  | 50% | 42.5d |  |
| 284 |  | 测试报告评审检查 | 0.5d | 2012-05-31 09:00 | 2012-05-31 14:00 |  |  | 24.5d | start no earlier than 2012-05-31 08:00 |
| 285 |  | 检查结果反馈、确认 | 0.25d | 2012-05-31 09:00 A | 2012-05-31 11:00 |  |  | 24.75d | finish no earlier than 2010-09-14 17:00 |
| 286 |  | 不符合项跟踪、验证 | 0.25d | 2012-05-31 09:00 A | 2012-05-31 11:00 |  |  | 24.75d | start no earlier than 2010-09-15 08:00 |
| 287 |  | 迭代配置检查 | 20.88d | 2012-05-31 09:00 | 2012-06-27 17:00 |  |  | 4.12d | start no earlier than 2012-05-31 09:00 |
| 288 |  | QA工作报告编制 | 6.88d | 2012-05-25 08:00 A | 2012-06-01 17:00 |  |  | 23.12d | finish no earlier than 2012-06-01 17:00 |
| 289 | 6.2.2 | **第2迭代** | 43.88d | 2012-05-02 09:00 A | 2012-06-27 17:00 |  | 2% | 4.12d |  |
| 290 |  | 编制《QA工作计划》 | 0.5d | 2012-05-18 08:00 A | 2012-05-18 14:00 |  |  | 34.5d | start no earlier than 2010-07-16 08:00 |
| 291 |  | 评审《QA工作计划》 | 0.5d | 2012-05-21 08:00 A | 2012-05-21 14:00 |  | 25% | 33.5d | start no earlier than 2010-07-16 08:00 |
| 292 |  | 辅助项目经理进行项目裁剪、估算、计划、评审、配置等 | 0.25d | 2012-05-21 08:00 A | 2012-05-21 11:00 |  |  | 33.75d | start no earlier than 2010-07-16 08:00 |
| 293 |  | QA辅导 | 3.88d | 2012-05-21 09:00 | 2012-05-24 17:00 |  |  | 30.12d | finish no earlier than 2012-05-24 17:00 |
| 294 | 6.2.2.5 | **QA检查** | 42.5d | 2012-05-02 09:00 A | 2012-06-26 14:00 |  | 3% | 5.5d |  |
| 295 |  | 迭代开发流程检查 | 0.5d | 2012-05-02 09:00 | 2012-05-02 14:00 |  |  | 47.5d | start no earlier than 2012-05-02 08:00 |
| 296 |  | 用户故事评审检查 | 0.5d | 2012-05-03 09:00 | 2012-05-03 14:00 |  |  | 46.5d | start no earlier than 2012-05-03 08:00 |
| 297 |  | 概要设计评审检查 | 0.5d | 2012-05-04 08:00 A | 2012-05-04 14:00 |  | 25% | 45.5d | finish no earlier than 2010-09-14 17:00 |
| 298 |  | 测试方案评审检查 | 0.5d | 2012-05-07 09:00 | 2012-05-07 14:00 |  |  | 44.5d | start no earlier than 2012-05-07 08:00 |
| 299 |  | 编码活动检查 | 0.5d | 2012-05-08 08:00 A | 2012-05-08 14:00 |  | 25% | 43.5d | finish no earlier than 2010-09-14 17:00 |
| 300 |  | 测试用例评审检查 | 0.5d | 2012-05-09 08:00 A | 2012-05-09 14:00 |  | 50% | 42.5d |  |
| 301 |  | 测试报告评审检查 | 14.5d | 2012-06-06 09:00 | 2012-06-26 14:00 |  |  | 5.5d | start no earlier than 2012-06-06 08:30 |
| 302 |  | 检查结果反馈、确认 | 0.25d | 2012-06-14 08:30 A | 2012-06-14 11:00 |  |  | 13.75d | finish no earlier than 2012-06-26 11:00 |
| 303 |  | 不符合项跟踪、验证 | 0.25d | 2012-06-14 08:30 A | 2012-06-14 11:00 |  |  | 13.75d | finish no earlier than 2012-06-26 11:00 |
| 304 |  | 迭代配置检查 | 8.88d | 2012-06-15 09:00 | 2012-06-27 17:00 |  |  | 4.12d | start no earlier than 2012-06-15 08:30 |
| 305 |  | QA工作报告编制 | 0.5d | 2012-06-20 08:00 A | 2012-06-20 14:00 |  |  | 9.5d | finish no earlier than 2012-06-20 14:00 |
| 306 | 6.3 | **验收发布阶段** | 6d? | 2012-06-22 09:00 A | 2012-06-29 18:00 |  |  | 2d |  |
| 307 |  | QA计划维护调整 | 0.5d | 2012-06-22 09:00 | 2012-06-22 14:00 |  |  | 7d | start no earlier than 2012-06-22 08:00 |
| 308 |  | QA辅导 | 0.5d | 2012-06-27 13:00 | 2012-06-27 17:00 | 307 |  | 4.12d | finish no earlier than 2012-06-27 17:00 |
| 309 | 6.3.3 | **QA检查** | 5.5d | 2012-06-22 09:00 | 2012-06-29 14:00 |  |  | 2.5d |  |
| 310 |  | 验收发布阶段流程检查 | 0.5d | 2012-06-22 09:00 | 2012-06-22 14:00 |  |  | 7.5d | start no earlier than 2012-06-22 09:00 |
| 311 |  | 用户文档评审检查 | 0.5d | 2012-06-22 09:00 | 2012-06-22 14:00 |  |  | 7.5d | start no earlier than 2012-06-22 09:00 |
| 312 |  | 客户培训活动检查 | 0.5d | 2012-06-26 09:00 | 2012-06-26 14:00 |  |  | 5.5d | start no earlier than 2012-06-26 08:00 |
| 313 |  | 试运行活动检查 | 0.5d | 2012-06-26 09:00 | 2012-06-26 14:00 |  |  | 5.5d | start no earlier than 2012-06-26 09:00 |
| 314 |  | 验收测试活动检查 | 0.5d | 2012-06-26 14:00 | 2012-06-26 18:00 | 315 |  | 4.5d | start no earlier than 2012-06-26 09:00 |
| 315 |  | 缺陷处理检查 | 0.5d | 2012-06-26 09:00 | 2012-06-26 14:00 |  |  | 4.5d | start no earlier than 2012-06-26 09:00 |
| 316 |  | 验收报告检查 | 0.5d | 2012-06-27 09:00 | 2012-06-27 14:00 | 314 |  | 4.5d | start no earlier than 2012-06-26 09:00 |
| 317 |  | 系统发布活动检查 | 0.5d | 2012-06-26 09:00 | 2012-06-26 14:00 |  |  | 5.5d | start no earlier than 2012-06-26 09:00 |
| 318 |  | 检查结果反馈、确认 | 0.5d | 2012-06-29 09:00 | 2012-06-29 14:00 |  |  | 2.5d | start no earlier than 2012-06-29 08:00 |
| 319 |  | 不符合项跟踪、验证 | 0.5d | 2012-06-29 09:00 | 2012-06-29 14:00 |  |  | 2.5d | start no earlier than 2012-06-29 09:00 |
| 320 |  | 发布基线配置检查 | 1d? | 2012-06-29 09:00 | 2012-06-29 18:00 |  |  | 2d | start no earlier than 2012-06-29 09:00 |
| 321 |  | QA工作报告编制 | 0.5d | 2012-06-29 09:00 A | 2012-06-29 14:00 |  |  | 2.5d | finish no earlier than 2012-03-22 18:00 |

## Version 2 (data date 2012-06-29, saved 2012-07-07, file RMV1.0_项目综合表(2012-05-21).mpp)

Note of the change: add

Last finish stays 2012-07-03. Complete tasks 49 → 96.

Removed: 136 第二期详细设计

Changed:

| ID | Task | Start | Finish | Duration | Complete | Total float | Predecessors | Other |
| --- | --- | --- | --- | --- | --- | --- | --- | --- |
| 27 | **迭代开发** |  |  | 54d? → 58d? | 13% → 40% |  |  |  |
| 28 | **第1迭代** |  | 2012-06-05 17:30 → 2012-06-12 18:00 (+7d) | 35.94d? → 44d? | 14% → 46% | 20.06d → 16d |  |  |
| 29 | **项目管理** |  | 2012-06-01 18:00 → 2012-06-01 14:00 | 31d → 32.5d |  | 23d → 25.5d |  |  |
| 31 | **监控** |  | 2012-06-01 18:00 → 2012-05-31 17:00 (-1d) | 30d → 30.88d |  | 23d → 26.12d |  |  |
| 32 | 周例会（完成功能确认） | 2012-05-04 17:00 → 2012-05-08 17:00 (+4d) |  |  |  | 24.12d → 26.12d |  |  |
| 33 | 项目周报编制 | 2012-05-04 17:00 → 2012-05-08 17:00 (+4d) |  |  |  | 24.12d → 26.12d |  |  |
| 34 | 偏差、风险、问题识别与跟踪 |  | 2012-06-01 18:00 → 2012-05-30 18:00 (-2d) |  |  | 23d → 27d |  |  |
| 36 | 变更管理 |  | 2012-06-01 18:00 → 2012-05-30 18:00 (-2d) |  |  | 23d → 27d |  |  |
| 44 | **业务需求** |  | 2012-06-05 17:30 → 2012-06-12 18:00 (+7d) | 35.94d? → 44d? | 24% → 72% | 20.06d → 16d |  |  |
| 48 | 第一期详细设计 | 2012-05-02 09:00 A |  |  | 0% → 10% | 40.1d → 49d |  |  |
| 49 | **招聘需求** | 2012-05-07 09:00 → 2012-05-14 09:00 A (+7d) | 2012-05-09 17:12 → 2012-05-21 18:00 A (+12d) | 2.9d → 7d | 0% → 100% | 40.1d → none |  |  |
| 50 | 编码 | 2012-05-07 09:00 → 2012-05-14 09:00 A (+7d) | 2012-05-08 18:00 → 2012-05-18 18:00 A (+10d) | 2d → 5d | 0% → 100% | 40.1d → none | 48 → none | constraint none → start no earlier than 2012-05-14 08:00; resources 江岱伟 → 小邱 |
| 51 | 测试 | 2012-05-09 09:00 → 2012-05-19 08:00 A (+10d) | 2012-05-09 13:12 → 2012-05-21 18:00 A (+12d) | 0.4d → 2d | 0% → 100% | 40.1d → none | 50 → none | constraint none → start no earlier than 2012-05-19 08:00 |
| 52 | 走查 | 2012-05-09 13:12 → 2012-05-21 18:00 A (+12d) | 2012-05-09 17:12 → 2012-05-21 18:00 A (+12d) | 0.5d → 0d | 0% → 100% | 40.1d → none |  |  |
| 53 | **招聘设置-招聘负责人设定** | 2012-05-07 09:00 → 2012-05-14 09:00 A (+7d) | 2012-05-08 13:36 → 2012-05-21 18:00 A (+13d) | 1.45d → 7d | 0% → 100% | 43.55d → none |  |  |
| 54 | 编码 | 2012-05-07 09:00 → 2012-05-14 09:00 A (+7d) | 2012-05-07 18:00 → 2012-05-18 18:00 A (+11d) | 1d → 5d | 0% → 100% | 43.55d → none | 48 → none | constraint none → start no earlier than 2012-05-14 08:00; resources 小邱 → 江岱伟 |
| 55 | 测试 | 2012-05-08 09:00 → 2012-05-19 08:00 A (+11d) | 2012-05-08 10:36 → 2012-05-21 18:00 A (+13d) | 0.2d → 2d | 0% → 100% | 43.55d → none | 54 → none | constraint none → start no earlier than 2012-05-19 08:00 |
| 56 | 走查 | 2012-05-08 10:36 → 2012-05-16 08:00 A (+8d) | 2012-05-08 13:36 → 2012-05-16 08:00 A (+8d) | 0.25d → 0d | 0% → 100% | 43.55d → none | 55 → none | constraint none → start no earlier than 2012-05-16 08:00 |
| 57 | **招聘设置-招聘渠道定义** | 2012-05-07 09:00 → 2012-05-16 09:00 A (+9d) | 2012-05-08 13:36 → 2012-05-23 18:00 A (+15d) | 1.45d → 7d | 0% → 100% | 40.55d → none |  |  |
| 58 | 编码 | 2012-05-07 09:00 → 2012-05-16 09:00 A (+9d) | 2012-05-07 18:00 → 2012-05-21 18:00 A (+14d) | 1d → 5d | 0% → 100% | 40.55d → none | 48 → none | constraint none → start no earlier than 2012-05-16 08:00 |
| 59 | 测试 | 2012-05-08 09:00 → 2012-05-22 09:00 A (+14d) | 2012-05-08 10:36 → 2012-05-23 18:00 A (+15d) | 0.2d → 2d | 0% → 100% | 40.55d → none |  | constraint none → start no earlier than 2012-05-22 08:00 |
| 60 | 走查 | 2012-05-08 10:36 → 2012-05-23 18:00 A (+15d) | 2012-05-08 13:36 → 2012-05-23 18:00 A (+15d) | 0.25d → 0d | 0% → 100% | 40.55d → none |  |  |
| 61 | **招聘需求汇总** | 2012-05-09 17:12 → 2012-05-14 09:00 A (+5d) | 2012-05-14 14:00 → 2012-05-21 18:00 A (+7d) | 3.6d → 7d | 0% → 100% | 38.5d → none |  |  |
| 62 | 编码 | 2012-05-09 17:12 → 2012-05-14 09:00 A (+5d) | 2012-05-11 17:12 → 2012-05-18 18:00 A (+7d) | 2d → 5d | 0% → 100% | 40.1d → none | 52 → none | constraint none → start no earlier than 2012-05-14 08:00 |
| 63 | 测试 | 2012-05-12 08:30 → 2012-05-19 08:00 A (+7d) | 2012-05-12 11:42 → 2012-05-21 18:00 A (+9d) | 0.4d → 2d | 0% → 100% | 39.54d → none | none → 62 | constraint start no earlier than 2012-05-12 08:30 → start no earlier than 2012-05-19 08:00 |
| 64 | 走查 | 2012-05-14 09:00 → 2012-05-17 08:00 A (+3d) | 2012-05-14 14:00 → 2012-05-17 08:00 A (+3d) | 0.5d → 0d | 0% → 100% | 38.5d → none |  | constraint start no earlier than 2012-05-14 08:00 → start no earlier than 2012-05-17 08:00 |
| 65 | **招聘计划-制定招聘计划** | 2012-05-08 13:36 → 2012-05-22 09:00 A (+14d) | 2012-05-11 17:12 → 2012-05-28 18:00 A (+17d) | 3.45d → 7d | 0% → 100% | 40.1d → none |  |  |
| 66 | 编码 | 2012-05-08 13:36 → 2012-05-22 09:00 A (+14d) | 2012-05-10 13:36 → 2012-05-26 17:00 A (+16d) | 2d → 5d | 0% → 100% | 41.55d → none | 60 → none | constraint none → start no earlier than 2012-05-22 08:00 |
| 67 | 测试 | 2012-05-11 09:00 → 2012-05-27 08:00 A (+16d) | 2012-05-11 13:12 → 2012-05-28 18:00 A (+17d) | 0.4d → 2d | 0% → 100% | 40.1d → none | none → 66 | constraint start no earlier than 2012-05-11 08:30 → start no earlier than 2012-05-27 08:00 |
| 68 | 走查 | 2012-05-11 13:12 → 2012-05-28 18:00 A (+17d) | 2012-05-11 17:12 → 2012-05-28 18:00 A (+17d) | 0.5d → 0d | 0% → 100% | 40.1d → none |  |  |
| 69 | **面试人员简历** | 2012-05-08 13:36 → 2012-05-22 09:00 A (+14d) | 2012-05-14 14:00 → 2012-05-28 18:00 A (+14d) | 5.05d → 7d | 0% → 100% | 36.75d → none |  |  |
| 70 | 编码 | 2012-05-08 13:36 → 2012-05-22 09:00 A (+14d) | 2012-05-11 13:36 → 2012-05-26 17:00 A (+15d) | 3d → 5d | 0% → 100% | 40.55d → none | 60 → none | constraint none → start no earlier than 2012-05-22 08:00 |
| 71 | 测试 | 2012-05-12 08:30 → 2012-05-27 08:00 A (+15d) | 2012-05-12 13:30 → 2012-05-28 18:00 A (+16d) | 0.5d → 2d | 0% → 100% | 33.14d → none | none → 70 | constraint start no earlier than 2012-05-12 08:30 → none |
| 72 | 走查 | 2012-05-14 09:00 → 2012-05-23 08:00 A (+9d) | 2012-05-14 14:00 → 2012-05-23 08:00 A (+9d) | 0.5d → 0d | 0% → 100% | 38.5d → none |  | constraint start no earlier than 2012-05-14 08:30 → start no earlier than 2012-05-23 08:00 |
| 73 | **招聘计划执行** | 2012-05-14 14:30 → 2012-05-22 09:00 A (+8d) | 2012-05-16 13:42 → 2012-05-28 18:00 A (+12d) | 1.9d → 7d | 0% → 100% | 33.14d → none |  |  |
| 74 | 编码 | 2012-05-14 14:30 → 2012-05-22 09:00 A (+8d) | 2012-05-15 14:30 → 2012-05-26 17:00 A (+11d) | 1d → 5d | 0% → 100% | 33.14d → none | 71FS+1d → none | constraint none → start no earlier than 2012-05-22 08:00 |
| 75 | 测试 | 2012-05-15 14:30 → 2012-05-27 08:00 A (+12d) | 2012-05-15 17:42 → 2012-05-28 18:00 A (+13d) | 0.4d → 2d | 0% → 100% | 33.14d → none |  |  |
| 76 | 走查 | 2012-05-15 17:42 → 2012-05-28 18:00 A (+13d) | 2012-05-16 13:42 → 2012-05-28 18:00 A (+12d) | 0.5d → 0d | 0% → 100% | 36.54d → none |  |  |
| 77 | **简历复选** | 2012-05-15 17:42 → 2012-05-30 09:00 A (+15d) | 2012-05-17 13:18 → 2012-06-06 18:00 A (+20d) | 1.45d → 7d | 0% → 100% | 33.14d → none |  |  |
| 78 | 编码 | 2012-05-15 17:42 → 2012-05-30 09:00 A (+15d) | 2012-05-16 17:42 → 2012-06-04 18:00 A (+19d) | 1d → 5d | 0% → 100% | 33.14d → none | 75 → none | constraint none → start no earlier than 2012-05-30 08:00 |
| 79 | 测试 | 2012-05-16 17:42 → 2012-06-05 09:00 A (+20d) | 2012-05-17 10:18 → 2012-06-06 18:00 A (+20d) | 0.2d → 2d | 0% → 100% | 33.14d → none |  |  |
| 80 | 走查 | 2012-05-17 10:18 → 2012-06-06 18:00 A (+20d) | 2012-05-17 13:18 → 2012-06-06 18:00 A (+20d) | 0.25d → 0d | 0% → 100% | 35.59d → none |  |  |
| 81 | **面试管理-电话初试** | 2012-05-17 10:18 → 2012-05-30 09:00 A (+13d) | 2012-05-18 16:30 → 2012-06-06 18:00 A (+19d) | 1.65d → 7d | 0% → 100% | 34.19d → none |  |  |
| 82 | 编码 | 2012-05-17 10:18 → 2012-05-30 09:00 A (+13d) | 2012-05-18 10:18 → 2012-06-04 18:00 A (+17d) | 1d → 5d | 0% → 100% | 34.19d → none | 79 → none | constraint none → start no earlier than 2012-05-30 08:00 |
| 83 | 测试 | 2012-05-18 10:18 → 2012-06-05 09:00 A (+18d) | 2012-05-18 14:30 → 2012-06-06 18:00 A (+19d) | 0.4d → 2d | 0% → 100% | 34.19d → none |  |  |
| 84 | 走查 | 2012-05-18 14:30 → 2012-06-06 18:00 A (+19d) | 2012-05-18 16:30 → 2012-06-06 18:00 A (+19d) | 0.25d → 0d | 0% → 100% | 34.19d → none |  |  |
| 85 | **招聘设置-人才类型设置** | 2012-05-18 10:18 → 2012-05-31 17:00 A (+13d) | 2012-05-21 16:54 → 2012-06-08 17:00 A (+18d) | 1.7d → 7d | 0% → 100% | 33.14d → none |  |  |
| 86 | 编码 | 2012-05-18 10:18 → 2012-05-31 17:00 A (+13d) | 2012-05-21 10:18 → 2012-06-06 17:00 A (+16d) | 1d → 5d | 0% → 100% | 33.14d → none | 79FS+1d → none | constraint finish no earlier than 2012-05-18 17:00 → finish no earlier than 2012-06-06 17:00 |
| 87 | 测试 | 2012-05-21 10:18 → 2012-06-06 17:00 A (+16d) | 2012-05-21 11:54 → 2012-06-08 17:00 A (+18d) | 0.2d → 2d | 0% → 100% | 33.14d → none |  |  |
| 88 | 走查 | 2012-05-21 11:54 → 2012-06-08 08:00 A (+18d) | 2012-05-21 16:54 → 2012-06-08 08:00 A (+18d) | 0.5d → 0d | 0% → 100% | 33.14d → none | 87 → none | constraint none → start no earlier than 2012-06-08 08:00 |
| 89 | 需求疑问的跟进 | 2012-05-02 17:30 → 2012-05-09 17:00 A (+7d) | 2012-05-18 17:30 → 2012-05-25 17:00 (+7d) | 13d? → 14d? | 0% → 56% | 34.06d → 32.12d |  | constraint finish no earlier than 2012-05-18 17:30 → finish no earlier than 2012-05-25 17:00 |
| 90 | 开发技术支持 | 2012-05-02 17:00 → 2012-05-09 17:00 A (+7d) | 2012-05-18 17:00 → 2012-05-25 17:00 (+7d) | 13d? → 14d? | 0% → 56% | 34.12d → 32.12d |  | constraint finish no earlier than 2012-05-18 17:00 → finish no earlier than 2012-05-25 17:00 |
| 91 | 日常的沟通和协调 | 2012-04-24 09:00 → 2012-04-27 17:00 A (+3d) | 2012-05-21 18:00 → 2012-05-25 17:00 (+4d) | 21d → 22d | 0% → 67% | 33d → 32.12d |  | constraint start no earlier than 2012-04-24 08:30 → finish no earlier than 2012-05-25 17:00 |
| 92 | 第一期 bug的修复 | 2012-05-21 09:00 → 2012-05-25 09:00 (+4d) | 2012-05-31 18:00 → 2012-06-04 18:00 (+4d) |  |  | 24d → 23d |  | constraint start no earlier than 2012-05-21 08:00 → start no earlier than 2012-05-25 08:00 |
| 94 | **迭代测试** | 2012-04-28 08:30 A → 2012-05-04 08:00 A (+6d) | 2012-06-05 17:30 → 2012-06-12 18:00 (+7d) | 29.94d → 34d | 65% → 63% | 20.06d → 16d |  |  |
| 95 | **迭代测试** | 2012-04-28 08:30 A → 2012-05-04 08:00 A (+6d) | 2012-05-23 17:30 → 2012-05-30 18:00 (+7d) | 18.94d → 23d | 61% → 60% | 31.06d → 27d |  |  |
| 96 | 测试方案编制 | 2012-05-04 08:30 A → 2012-05-11 08:00 A (+7d) | 2012-05-08 17:00 A → 2012-05-14 18:00 (+6d) | 2.88d → 3d | 100% → 96% | none → 42d |  |  |
| 97 | 测试方案评审 | 2012-05-09 08:30 A → 2012-05-16 08:00 A (+7d) |  | 0.94d → 1d | 53% → 50% | 34.06d → 38.06d |  |  |
| 98 | 测试用例编制 | 2012-04-28 08:30 A → 2012-05-04 08:00 A (+6d) | 2012-05-09 17:00 → 2012-05-14 18:00 (+5d) | 7.88d → 8d | 37% → 36% | 42.12d → 42d |  |  |
| 99 | 测试用例评审 | 2012-05-11 08:30 A → 2012-05-18 08:00 A (+7d) | 2012-05-16 17:30 → 2012-05-23 18:00 (+7d) | 4.94d → 5d |  | 36.06d → 34d |  |  |
| 100 | 测试环境搭建 | 2012-05-18 08:30 A → 2012-05-25 08:00 A (+7d) | 2012-05-21 18:00 A → 2012-05-26 17:00 A (+5d) |  |  |  |  |  |
| 101 | 迭代测试执行 | 2012-05-21 08:30 A → 2012-05-28 08:00 A (+7d) | 2012-05-23 17:30 A → 2012-05-30 18:00 (+7d) | 2.94d → 3d | 100% → 98% | none → 27d |  |  |
| 102 | 缺陷处理 | 2012-05-21 08:30 A → 2012-05-28 08:00 A (+7d) | 2012-05-23 17:30 A → 2012-05-30 18:00 (+7d) | 2.94d → 3d | 100% → 98% | none → 27d |  |  |
| 103 | **回归测试** | 2012-05-29 08:30 A → 2012-06-05 08:00 A (+7d) | 2012-06-05 17:30 → 2012-06-12 18:00 (+7d) | 6.94d → 7d | 71% → 69% | 20.06d → 16d |  |  |
| 104 | 回归测试执行 | 2012-05-29 08:30 A → 2012-06-05 08:00 A (+7d) | 2012-05-31 17:30 A → 2012-06-07 18:00 (+7d) | 2.94d → 3d | 100% → 98% | none → 20d |  |  |
| 105 | 缺陷处理 | 2012-05-29 08:30 A → 2012-06-05 08:00 A (+7d) | 2012-06-05 17:30 → 2012-06-12 18:00 (+7d) | 6.94d → 7d |  | 20.06d → 16d |  |  |
| 106 | 测试报告编写 | 2012-05-31 08:30 A → 2012-06-05 08:00 A (+5d) | 2012-06-01 17:00 A → 2012-06-06 18:00 (+5d) | 1.88d → 2d | 100% → 94% | none → 21d |  |  |
| 107 | 测试报告评审 | 2012-05-31 08:30 A → 2012-06-05 08:00 A (+5d) | 2012-06-01 17:00 A → 2012-06-06 18:00 (+5d) | 1.88d → 2d | 100% → 94% | none → 21d |  |  |
| 108 | 用户文档编制 | 2012-05-31 08:30 A → 2012-06-07 08:00 A (+7d) | 2012-06-04 17:00 A → 2012-06-11 18:00 (+7d) | 3.88d → 4d | 100% → 97% | none → 17d |  |  |
| 109 | 用户文档测试 | 2012-06-01 08:30 A → 2012-06-08 08:00 A (+7d) | 2012-06-02 16:00 A → 2012-06-09 17:00 (+7d) | 1.88d → 2d | 100% → 94% | none → 18d |  |  |

| ID | Task | Start | Finish | Duration | Complete | Total float | Predecessors | Other |
| --- | --- | --- | --- | --- | --- | --- | --- | --- |
| 110 | **演示与发布** | 2012-06-01 09:00 → 2012-06-08 09:00 (+7d) | 2012-06-01 14:00 → 2012-06-08 14:00 (+7d) |  |  | 23.5d → 19.5d |  |  |
| 111 | 迭代演示 | 2012-06-01 09:00 → 2012-06-08 09:00 (+7d) | 2012-06-01 14:00 → 2012-06-08 14:00 (+7d) |  |  | 23.5d → 19.5d |  | constraint start no earlier than 2012-06-01 08:30 → start no earlier than 2012-06-08 08:00 |
| 112 | 验收发布 | 2012-06-01 09:00 → 2012-06-08 09:00 (+7d) | 2012-06-01 14:00 → 2012-06-08 14:00 (+7d) |  |  | 23.5d → 19.5d |  | constraint start no earlier than 2012-06-01 08:00 → start no earlier than 2012-06-08 08:00 |
| 113 | **合同付款** | 2012-06-04 09:00 → 2012-06-11 09:00 (+7d) | 2012-06-04 18:00 → 2012-06-11 18:00 (+7d) |  |  | 21d → 17d |  |  |
| 114 | 要求对方提供项目款发票 | 2012-06-04 09:00 → 2012-06-11 09:00 (+7d) | 2012-06-04 18:00 → 2012-06-11 18:00 (+7d) |  |  | 21d → 17d |  | constraint start no earlier than 2012-06-04 08:00 → start no earlier than 2012-06-11 08:00 |
| 115 | 支付项目款 | 2012-06-04 09:00 → 2012-06-11 09:00 (+7d) | 2012-06-04 18:00 → 2012-06-11 18:00 (+7d) |  |  | 21d → 17d |  | constraint start no earlier than 2012-06-04 08:00 → start no earlier than 2012-06-11 08:00 |
| 116 | **第2迭代** |  |  | 52d? → 56d? | 12% → 33% |  |  |  |
| 117 | **项目管理** |  |  | 46.5d → 50.5d |  |  |  |  |
| 119 | **监控** | 2012-05-21 09:00 → 2012-05-28 09:00 (+7d) | 2012-06-08 17:00 → 2012-06-18 18:00 (+10d) | 16.88d → 19d |  | 17.12d → 11d |  |  |
| 120 | 周例会（完成功能确认） | 2012-05-22 17:00 → 2012-06-01 09:00 (+10d) | 2012-06-08 17:00 → 2012-06-18 18:00 (+10d) |  |  | 17.12d → 11d |  | constraint finish no earlier than 2012-06-08 17:00 → start no earlier than 2012-06-01 08:00 |
| 121 | 项目周报编制 | 2012-05-25 09:00 → 2012-06-01 09:00 (+7d) | 2012-06-04 11:40 → 2012-06-11 11:40 (+7d) |  |  | 21.67d → 17.67d |  | constraint start no earlier than 2012-05-25 08:00 → start no earlier than 2012-06-01 08:00 |
| 122 | 偏差、风险、问题识别与跟踪 | 2012-05-21 09:00 → 2012-05-28 09:00 (+7d) | 2012-06-06 18:00 → 2012-06-13 18:00 (+7d) |  |  | 19d → 15d |  | constraint start no earlier than 2012-05-21 08:00 → start no earlier than 2012-05-28 08:00 |
| 124 | 变更管理 | 2012-05-21 09:00 → 2012-05-28 09:00 (+7d) | 2012-06-08 15:20 → 2012-06-15 15:20 (+7d) |  |  | 17.33d → 13.33d |  | constraint start no earlier than 2012-05-21 08:00 → start no earlier than 2012-05-28 08:00 |
| 125 | 外部接口协调 |  | 2012-05-21 16:09 → 2012-05-19 15:09 (-2d) |  |  | 25.23d → 36.11d |  |  |
| 127 | 迭代2总结编制 |  |  |  |  |  |  | was named 迭代1总结编制 |
| 128 | 迭代2总结评审 |  |  |  |  |  |  | was named 迭代1总结评审 |
| 129 | **概要设计** | 2012-05-18 08:00 A → 2012-05-28 08:00 A (+10d) | 2012-05-18 10:30 → 2012-05-28 10:02 (+10d) | 0.19d → 0.13d |  | 34.81d → 29.87d |  |  |
| 130 | 设计（确认） | 2012-05-18 08:00 A → 2012-05-28 08:00 A (+10d) | 2012-05-18 09:30 → 2012-05-28 10:02 (+10d) | 0.06d → 0.13d |  | 34.81d → 29.87d |  |  |
| 131 | 评审 | 2012-05-18 08:00 A → 2012-05-28 08:00 A (+10d) | 2012-05-18 10:30 → 2012-05-28 10:02 (+10d) | 0.12d → 0.13d |  | 34.81d → 29.87d | 130 → none |  |
| 132 | **业务需求** |  |  | 41d? → 45d? | 18% → 47% |  |  |  |
| 134 | 用户故事编写（确认） | 2012-05-18 08:00 A → 2012-05-25 08:00 A (+7d) | 2012-05-18 18:00 A → 2012-05-25 14:00 A (+7d) | 1d → 0.5d |  |  |  | resources 黄新龙 → 黄新龙 [150%] |
| 135 | 用户故事评审（确认） | 2012-05-21 08:00 A → 2012-05-25 08:00 A (+4d) | 2012-05-21 14:00 → 2012-05-25 14:00 (+4d) |  |  | 33.5d → 32.5d |  |  |
| 136 | **招聘设置-通知模板编辑** | 2012-05-24 09:00 → 2012-06-07 09:00 A (+14d) | 2012-05-28 14:00 → 2012-06-09 17:00 A (+12d) | 3.5d → 3d | 0% → 100% | 27.5d → none |  |  |
| 137 | 编码 | 2012-05-24 09:00 → 2012-06-07 09:00 A (+14d) | 2012-05-25 18:00 → 2012-06-09 17:00 A (+15d) | 2d → 3d | 0% → 100% | 28.8d → none | 第二期详细设计 → none | constraint none → start no earlier than 2012-06-07 08:00 |
| 138 | 测试 | 2012-05-26 08:00 → 2012-06-09 08:00 A (+14d) | 2012-05-26 09:36 → 2012-06-09 12:00 A (+14d) | 0.2d → 0.5d | 0% → 100% | 28.8d → none | 137 → none | constraint none → start no earlier than 2012-06-09 08:00 |
| 139 | 走查 | 2012-05-28 09:00 → 2012-06-09 08:00 A (+12d) | 2012-05-28 14:00 → 2012-06-09 12:00 A (+12d) |  | 0% → 100% | 27.5d → none |  | constraint start no earlier than 2012-05-28 08:00 → start no earlier than 2012-06-09 08:00 |
| 140 | **面试管理-面试安排** | 2012-05-24 09:00 → 2012-06-07 09:00 A (+14d) | 2012-05-28 11:00 → 2012-06-09 17:00 A (+12d) | 3.25d → 3d | 0% → 100% | 27.75d → none |  |  |
| 141 | 编码 | 2012-05-24 09:00 → 2012-06-07 09:00 A (+14d) | 2012-05-25 18:00 → 2012-06-09 17:00 A (+15d) | 2d → 3d | 0% → 100% | 28.5d → none | 第二期详细设计 → none | constraint none → start no earlier than 2012-06-07 08:00 |
| 142 | 测试 | 2012-05-26 08:00 → 2012-06-09 08:00 A (+14d) | 2012-05-26 12:00 → 2012-06-09 12:00 A (+14d) |  | 0% → 100% | 28.5d → none | 141 → none | constraint none → start no earlier than 2012-06-09 08:00 |
| 143 | 走查 | 2012-05-28 09:00 → 2012-06-09 08:00 A (+12d) | 2012-05-28 11:00 → 2012-06-09 10:00 A (+12d) |  | 0% → 100% | 27.75d → none |  | constraint start no earlier than 2012-05-28 08:00 → start no earlier than 2012-06-09 08:00 |
| 144 | **前台接待** | 2012-05-24 09:00 → 2012-06-11 09:00 A (+18d) | 2012-05-28 14:00 → 2012-06-15 18:00 A (+18d) | 3.5d → 5d | 0% → 100% | 27.5d → none |  |  |
| 145 | 编码 | 2012-05-24 09:00 → 2012-06-11 09:00 A (+18d) | 2012-05-25 18:00 → 2012-06-15 14:00 A (+21d) | 2d → 4.5d | 0% → 100% | 27.5d → none | 第二期详细设计 → none | constraint none → start no earlier than 2012-06-11 08:00 |
| 146 | 测试 | 2012-05-26 08:00 → 2012-06-15 09:00 A (+20d) | 2012-05-26 17:00 → 2012-06-15 14:00 A (+20d) | 1d → 0.5d | 0% → 100% | 27.5d → none | 145 → none | constraint none → start no earlier than 2012-06-15 08:00 |
| 147 | 走查 | 2012-05-28 09:00 → 2012-06-15 14:00 A (+18d) | 2012-05-28 14:00 → 2012-06-15 18:00 A (+18d) |  | 0% → 100% | 27.5d → none |  |  |
| 148 | **面试管理-面试执行** | 2012-05-28 09:00 → 2012-06-09 08:00 A (+12d) | 2012-05-30 16:00 → 2012-06-13 17:00 (+14d) | 2.75d → 3.88d | 0% → 10% | 23.85d → 15.12d |  |  |
| 149 | 编码 | 2012-05-28 09:00 → 2012-06-09 08:00 A (+12d) | 2012-05-29 18:00 → 2012-06-13 17:00 (+15d) | 2d → 3.88d | 0% → 12% | 23.85d → 15.12d |  | constraint start no earlier than 2012-05-28 08:00 → finish no earlier than 2012-06-13 17:00 |
| 150 | 测试 | 2012-05-30 09:00 → 2012-06-13 09:00 (+14d) | 2012-05-30 14:00 → 2012-06-13 14:00 (+14d) |  |  | 23.85d → 15.25d | 149 → none | constraint none → start no earlier than 2012-06-13 08:00 |
| 151 | 走查 | 2012-05-30 14:00 → 2012-06-13 14:00 (+14d) | 2012-05-30 16:00 → 2012-06-13 16:00 (+14d) |  |  | 25.25d → 15.25d |  |  |
| 152 | **面试管理-拟录用** | 2012-05-28 09:00 → 2012-06-12 09:00 A (+15d) | 2012-05-30 18:00 → 2012-06-16 17:00 A (+17d) | 3d → 5d | 0% → 100% | 25d → none |  |  |
| 153 | 编码 | 2012-05-28 09:00 → 2012-06-12 09:00 A (+15d) | 2012-05-29 18:00 → 2012-06-16 17:00 A (+18d) | 2d → 5d | 0% → 100% | 25d → none | 第二期详细设计FS+2d → none | constraint start no earlier than 2012-05-28 08:00 → finish no earlier than 2012-06-16 17:00 |
| 154 | 测试 | 2012-05-30 09:00 → 2012-06-16 08:00 A (+17d) | 2012-05-30 14:00 → 2012-06-16 12:00 A (+17d) |  | 0% → 100% | 25d → none | 153 → none | constraint none → start no earlier than 2012-06-16 08:00 |
| 155 | 走查 | 2012-05-30 14:00 → 2012-06-16 13:00 A (+17d) | 2012-05-30 18:00 → 2012-06-16 17:00 A (+17d) |  | 0% → 100% | 25d → none |  |  |
| 156 | **面试管理-背景调查** | 2012-05-30 14:00 → 2012-06-15 09:00 A (+16d) | 2012-06-01 10:12 → 2012-06-18 17:00 A (+17d) | 1.65d → 2.88d | 0% → 100% | 23.85d → none |  |  |
| 157 | 编码 | 2012-05-30 14:00 → 2012-06-15 09:00 A (+16d) | 2012-05-31 14:00 → 2012-06-18 17:00 A (+18d) | 1d → 2.88d | 0% → 100% | 23.85d → none | 150 → none | constraint none → finish no earlier than 2012-06-18 17:00 |
| 158 | 测试 | 2012-05-31 14:00 → 2012-06-16 08:00 A (+16d) | 2012-05-31 17:12 → 2012-06-16 12:00 A (+16d) | 0.4d → 0.5d | 0% → 100% | 23.85d → none | 157 → none | constraint none → start no earlier than 2012-06-16 08:00 |
| 159 | 走查 | 2012-05-31 17:12 → 2012-06-16 13:00 A (+16d) | 2012-06-01 10:12 → 2012-06-16 15:00 A (+15d) |  | 0% → 100% | 23.85d → none |  |  |
| 160 | **入职手续-背景调查问题设定** | 2012-05-29 09:00 → 2012-06-16 08:00 A (+18d) | 2012-05-31 15:12 → 2012-06-21 17:00 (+21d) | 2.65d → 4.88d | 0% → 96% | 20d → 8.12d |  |  |
| 161 | 编码 | 2012-05-29 09:00 → 2012-06-16 08:00 A (+18d) | 2012-05-30 18:00 → 2012-06-21 17:00 A (+22d) | 2d → 4.88d | 0% → 100% | 20d → none | 第二期详细设计FS+4d → none | constraint none → finish no earlier than 2012-06-21 17:00 |
| 162 | 测试 | 2012-05-31 09:00 → 2012-06-19 09:00 A (+19d) | 2012-05-31 13:12 → 2012-06-19 14:00 A (+19d) | 0.4d → 0.5d | 0% → 100% | 20d → none | 161 → none | constraint none → start no earlier than 2012-06-19 08:00 |
| 163 | 走查 | 2012-05-31 13:12 → 2012-06-19 14:00 (+19d) | 2012-05-31 15:12 → 2012-06-19 16:00 (+19d) |  |  | 20d → 10.25d |  |  |
| 164 | **入职手续-入职手续** | 2012-05-31 15:12 → 2012-06-15 09:00 (+15d) | 2012-06-04 09:48 → 2012-06-21 17:00 (+17d) | 2.45d → 5.88d |  | 21.9d → 8.12d |  |  |
| 165 | 编码 | 2012-05-31 15:12 → 2012-06-15 09:00 (+15d) | 2012-06-02 14:12 → 2012-06-21 17:00 (+19d) | 2d → 5.88d |  | 21.9d → 8.12d | 163 → none | constraint finish no earlier than 2012-06-01 17:00 → finish no earlier than 2012-06-21 17:00 |
| 166 | 测试 | 2012-06-02 14:12 → 2012-06-18 09:00 (+16d) | 2012-06-02 15:48 → 2012-06-18 14:00 (+16d) | 0.2d → 0.5d |  | 21.9d → 11.25d | 165 → none | constraint none → start no earlier than 2012-06-18 08:00 |
| 167 | 走查 | 2012-06-02 15:48 → 2012-06-18 14:00 (+16d) | 2012-06-04 09:48 → 2012-06-18 16:00 (+14d) |  |  | 21.9d → 11.25d |  |  |
| 168 | **入职手续-体检明细表** | 2012-05-31 15:12 → 2012-06-16 08:00 A (+16d) | 2012-06-02 08:48 → 2012-06-21 17:00 (+19d) | 1.45d → 4.88d | 0% → 96% | 22.9d → 8.12d |  |  |
| 169 | 编码 | 2012-05-31 15:12 → 2012-06-16 08:00 A (+16d) | 2012-06-01 15:12 → 2012-06-21 17:00 A (+20d) | 1d → 4.88d | 0% → 100% | 22.9d → none | 163 → none | constraint none → finish no earlier than 2012-06-21 17:00 |
| 170 | 测试 | 2012-06-01 15:12 → 2012-06-19 09:00 A (+18d) | 2012-06-01 16:48 → 2012-06-19 14:00 A (+18d) | 0.2d → 0.5d | 0% → 100% | 22.9d → none | 169 → none | constraint none → start no earlier than 2012-06-19 08:00 |
| 171 | 走查 | 2012-06-01 16:48 → 2012-06-19 14:00 (+18d) | 2012-06-02 08:48 → 2012-06-19 16:00 (+17d) |  |  | 22.9d → 10.25d |  |  |
| 172 | **入职手续-离职证明** | 2012-05-31 15:12 → 2012-06-21 09:00 A (+21d) | 2012-06-02 08:48 → 2012-06-26 17:00 (+24d) | 1.45d → 3.88d | 0% → 95% | 20d → 5.12d |  |  |
| 173 | 编码 | 2012-05-31 15:12 → 2012-06-21 09:00 A (+21d) | 2012-06-01 15:12 → 2012-06-26 17:00 A (+25d) | 1d → 3.88d | 0% → 100% | 20d → none | 163 → none | constraint none → start no earlier than 2012-06-21 08:00 |
| 174 | 测试 | 2012-06-01 15:12 → 2012-06-22 09:00 A (+21d) | 2012-06-01 16:48 → 2012-06-22 14:00 A (+21d) | 0.2d → 0.5d | 0% → 100% | 20d → none | 173 → none | constraint none → start no earlier than 2012-06-22 08:00 |
| 175 | 走查 | 2012-06-01 16:48 → 2012-06-22 14:00 (+21d) | 2012-06-02 08:48 → 2012-06-22 16:00 (+20d) |  |  | 20d → 7.25d |  |  |
| 176 | **入职手续-入职** | 2012-06-04 09:00 → 2012-06-20 09:00 A (+16d) | 2012-06-05 13:36 → 2012-06-26 17:00 (+21d) | 1.45d → 4.88d | 0% → 96% | 19.1d → 5.12d |  |  |
| 177 | 编码 | 2012-06-04 09:00 → 2012-06-20 09:00 A (+16d) | 2012-06-04 18:00 → 2012-06-26 17:00 A (+22d) | 1d → 4.88d | 0% → 100% | 19.1d → none | 175 → none | constraint start no earlier than 2012-06-04 08:00 → finish no earlier than 2012-06-26 17:00 |
| 178 | 测试 | 2012-06-05 09:00 → 2012-06-22 09:00 A (+17d) | 2012-06-05 10:36 → 2012-06-22 14:00 A (+17d) | 0.2d → 0.5d | 0% → 100% | 19.1d → none | 177 → none | constraint none → start no earlier than 2012-06-22 08:00 |
| 179 | 走查 | 2012-06-05 10:36 → 2012-06-22 14:00 (+17d) | 2012-06-05 13:36 → 2012-06-22 16:00 (+17d) |  |  | 20.55d → 7.25d |  |  |
| 180 | **简历管理-面试简历统计** | 2012-06-05 10:36 → 2012-06-21 09:00 A (+16d) | 2012-06-06 17:12 → 2012-06-26 17:00 (+20d) | 1.7d → 3.88d | 0% → 94% | 19.1d → 5.12d |  |  |
| 181 | 编码 | 2012-06-05 10:36 → 2012-06-21 09:00 A (+16d) | 2012-06-06 10:36 → 2012-06-26 17:00 A (+20d) | 1d → 3.88d | 0% → 100% | 19.1d → none | 178 → none | constraint none → finish no earlier than 2012-06-26 17:00 |
| 182 | 测试 | 2012-06-06 10:36 → 2012-06-21 09:00 A (+15d) | 2012-06-06 14:48 → 2012-06-21 14:00 A (+15d) | 0.4d → 0.5d | 0% → 100% | 19.1d → none | 181 → none | constraint none → start no earlier than 2012-06-21 08:00 |
| 183 | 走查 | 2012-06-06 14:48 → 2012-06-21 14:00 (+15d) | 2012-06-06 17:12 → 2012-06-21 16:24 (+15d) |  |  | 19.1d → 8.2d |  |  |

| ID | Task | Finish | Duration | Total float |
| --- | --- | --- | --- | --- |
| 184 | 需求疑问的跟进 | 2012-06-07 18:00 → 2012-06-06 18:00 (-1d) |  | 18d → 21d |
| 185 | 开发技术支持 | 2012-06-07 18:00 → 2012-06-06 18:00 (-1d) |  | 18d → 21d |
| 186 | 日常的沟通和协调 | 2012-06-07 18:00 → 2012-06-06 18:00 (-1d) |  | 18d → 21d |
| 187 | 第一、二期bugs修复 | 2012-06-22 18:00 → 2012-06-20 18:00 (-2d) |  | 7d → 9d |
| 189 | **迭代测试** |  | 14.88d → 16.88d |  |
| 190 | **迭代测试** | 2012-06-13 17:30 → 2012-06-12 17:30 (-1d) |  | 14.06d → 16.06d |
| 193 | 缺陷处理 | 2012-06-13 17:30 A → 2012-06-12 17:30 A (-1d) |  |  |
| 194 | **回归测试** |  | 7.88d → 8.88d |  |
| 195 | 回归测试执行 | 2012-06-18 17:30 A → 2012-06-16 16:30 A (-2d) |  |  |
| 196 | 缺陷处理 | 2012-06-18 17:30 A → 2012-06-16 16:30 A (-2d) |  |  |
| 198 | 测试报告评审 | 2012-06-25 08:00 A → 2012-06-18 08:30 A (-7d) |  |  |
| 199 | 测试总结编写 | 2012-06-25 08:00 A → 2012-06-18 08:30 A (-7d) |  |  |
| 224 | **配置管理** |  | 567d? → 571d? |  |
| 233 | **创建基线** |  | 47d? → 51d? |  |
| 239 | **迭代开发基线** |  | 44d? → 48d? |  |
| 240 | **第1次迭代** |  | 9.5d → 10.5d | 24.5d → 26.5d |
| 244 | **第2次迭代** |  | 14d? → 16d? |  |
| 257 | **质量保证** |  | 57d? → 61d? |  |
| 270 | **迭代开发** | 2012-06-27 17:00 → 2012-06-26 17:00 (-1d) | 47.88d → 50.88d | 4.12d → 5.12d |
| 271 | **第1迭代** | 2012-06-27 17:00 → 2012-06-25 17:00 (-2d) | 47.88d → 49.88d | 4.12d → 6.12d |
| 276 | **QA检查** |  | 27.5d → 29.5d | 24.5d → 26.5d |
| 286 | 迭代配置检查 | 2012-06-27 17:00 → 2012-06-25 17:00 (-2d) |  | 4.12d → 6.12d |
| 287 | QA工作报告编制 | 2012-06-01 17:00 → 2012-05-31 17:00 (-1d) |  | 23.12d → 26.12d |
| 288 | **第2迭代** | 2012-06-27 17:00 → 2012-06-26 17:00 (-1d) | 43.88d → 46.88d | 4.12d → 5.12d |
| 293 | **QA检查** | 2012-06-26 14:00 → 2012-06-22 14:00 (-4d) | 42.5d → 44.5d | 5.5d → 7.5d |
| 300 | 测试报告评审检查 | 2012-06-26 14:00 → 2012-06-22 14:00 (-4d) |  | 5.5d → 7.5d |
| 303 | 迭代配置检查 | 2012-06-27 17:00 → 2012-06-26 17:00 (-1d) |  | 4.12d → 5.12d |

## Version 3 (data date 2012-06-29, saved 2012-08-10, file RMV1.0项目综合表（2012-8-10）.mpp)

Note of the change: add

Last finish 2012-07-03 → 2012-09-11 (+70d). Complete tasks 96 → 99.

Changed:

| ID | Task | Start | Finish | Duration | Complete | Total float | Predecessors | Other |
| --- | --- | --- | --- | --- | --- | --- | --- | --- |
| 27 | **迭代开发** |  | 2012-06-29 18:00 → 2012-09-11 17:00 (+74d) | 58d? → 109.88d? | 40% → 36% | 2d → 0d |  |  |
| 28 | **第1迭代** |  | 2012-06-12 18:00 → 2012-09-11 17:00 (+91d) | 44d? → 109.88d? | 46% → 39% | 16d → 0d |  |  |
| 44 | **业务需求** |  | 2012-06-12 18:00 → 2012-09-11 17:00 (+91d) | 44d? → 109.88d? | 72% → 61% | 16d → 0d |  |  |
| 94 | **迭代测试** | 2012-05-04 08:00 A → 2012-05-14 08:00 A (+10d) | 2012-06-12 18:00 → 2012-08-24 15:00 (+73d) | 34d → 80.62d | 63% → 25% | 16d → 12.25d |  |  |
| 95 | **迭代测试** | 2012-05-04 08:00 A → 2012-05-14 08:00 A (+10d) | 2012-05-30 18:00 → 2012-08-24 15:00 (+86d) | 23d → 80.62d | 60% → 39% | 27d → 12.25d |  |  |
| 96 | 测试方案编制 | 2012-05-11 08:00 A → 2012-05-17 08:00 A (+6d) | 2012-05-14 18:00 → 2012-05-18 17:00 A (+4d) | 3d → 1.88d | 96% → 100% | 42d → none |  | resources 王军武 [34.8%] → 赵茜茜 |
| 97 | 测试方案评审 | 2012-05-16 08:00 A → 2012-05-21 08:00 A (+5d) | 2012-05-18 17:30 → 2012-05-21 17:30 A (+3d) | 1d → 0.94d | 50% → 100% | 38.06d → none |  |  |
| 98 | 测试用例编制 | 2012-05-04 08:00 A → 2012-05-14 08:00 A (+10d) | 2012-05-14 18:00 → 2012-05-18 17:00 A (+4d) | 8d → 4.88d | 36% → 100% | 42d → none |  | constraint finish no earlier than 2012-05-08 17:30 → finish no earlier than 2012-05-18 17:00; resources 王军武 → 王军武; 赵茜茜; 刘映; 梁朋 |
| 99 | 测试用例评审 | 2012-05-18 08:00 A → 2012-05-21 08:00 A (+3d) | 2012-05-23 18:00 → 2012-05-21 17:00 A (-2d) | 5d → 0.88d | 18% → 100% | 34d → none |  | resources 测试组 [57.1%]; 项目经理 [57.1%] → 测试组; 项目经理 |
| 100 | 测试环境搭建 | 2012-05-25 08:00 A → 2012-08-02 08:00 A (+69d) | 2012-05-26 17:00 A → 2012-08-03 18:00 (+69d) |  | 100% → 55% | none → 24d |  | resources none → 戴金平 |
| 101 | 迭代测试执行 | 2012-05-28 08:00 A → 2012-08-06 09:00 (+70d) | 2012-05-30 18:00 → 2012-08-08 17:00 (+70d) | 3d → 2.88d | 98% → 0% | 27d → 24d | none → 100 | constraint start no earlier than 2011-09-28 08:00 → finish no earlier than 2012-08-08 17:00; resources none → 赵茜茜 [55.6%]; 刘映 [55.6%]; 王军武 [55.6%]; 梁朋 [55.6%] |
| 102 | 缺陷处理 | 2012-05-28 08:00 A → 2012-08-09 09:00 (+73d) | 2012-05-30 18:00 → 2012-08-24 15:00 (+86d) | 3d → 11.62d | 98% → 0% | 27d → 12.25d |  | constraint finish no earlier than 2012-05-23 17:30 → start no earlier than 2012-08-09 08:00; resources none → 项目组 |
| 103 | **回归测试** | 2012-06-05 08:00 A → 2012-08-10 09:00 (+66d) | 2012-06-12 18:00 → 2012-08-22 17:00 (+71d) | 7d → 8.88d | 69% → 0% | 16d → 14d |  |  |
| 104 | 回归测试执行 | 2012-06-05 08:00 A → 2012-08-15 09:00 (+71d) | 2012-06-07 18:00 → 2012-08-17 16:30 (+71d) | 3d → 2.81d | 98% → 0% | 20d → 17.06d |  | constraint finish no earlier than 2012-05-31 17:30 → start no earlier than 2012-08-15 09:00; resources none → 赵茜茜; 刘映; 王军武; 梁朋 |
| 105 | 缺陷处理 | 2012-06-05 08:00 A → 2012-08-10 09:00 (+66d) | 2012-06-12 18:00 → 2012-08-22 17:00 (+71d) | 7d → 8.88d | 42% → 0% | 16d → 14d |  | constraint finish no earlier than 2012-06-05 17:30 → start no earlier than 2012-08-10 08:00; resources none → 项目组 |
| 106 | 测试报告编写 | 2012-06-05 08:00 A → 2012-08-16 09:00 (+72d) | 2012-06-06 18:00 → 2012-08-17 17:00 (+72d) | 2d → 1.88d | 94% → 0% | 21d → 17d |  | constraint start no earlier than 2011-10-08 08:00 → finish no earlier than 2012-08-17 17:00; resources none → 赵茜茜 |
| 107 | 测试报告评审 | 2012-06-05 08:00 A → 2012-08-20 13:30 (+76d) | 2012-06-06 18:00 → 2012-08-20 15:15 (+75d) | 2d → 0.22d | 94% → 0% | 21d → 16.22d |  | constraint start no earlier than 2011-10-08 08:00 → start no earlier than 2012-08-20 13:30; resources none → 测试组; 项目组 |
| 108 | 用户文档编制 | 2012-06-07 08:00 A → 2012-09-03 09:00 (+88d) | 2012-06-11 18:00 → 2012-09-07 17:00 (+88d) | 4d → 4.88d | 97% → 0% | 17d → 2d |  | constraint start no earlier than 2011-09-26 08:00 → start no earlier than 2012-09-03 08:00; resources none → 赵茜茜 |
| 109 | 用户文档测试 | 2012-06-08 08:00 A → 2012-09-10 09:00 (+94d) | 2012-06-09 17:00 → 2012-09-11 17:00 (+94d) | 2d → 1.88d | 94% → 0% | 18d → 0d |  | constraint start no earlier than 2011-10-09 08:00 → finish no earlier than 2012-09-11 17:00; resources none → 测试组 |
